Schedule from MS Project, 2016-09-12 to 2017-01-05, status date 2016-12-22, costs in €, A marks actual dates.

## Calendars

- Estándar: Mon-Fri 09:00-13:00, 15:00-19:00; Sat-Sun off.

## Resources

| Resource | Rate |
| --- | --- |
| HÉCTOR MEDINA | 9.23 |
| DAVID SEGARRA | 9.23 |
| JAUME LLORET | 9.23 |
| SAMUEL NAVARRO | 9.23 |
| PABLO TORREGROSA | 9.23 |
| IVAN PINA | 9.23 |

## Schedule

| ID | WBS | Task | Duration | Start | Finish | Predecessors | Complete | Remaining | Baseline start | Baseline finish | Baseline duration | Total slack | Free slack | Constraint | Resources | Work | Actual work | Cost | Baseline cost | Actual cost |
| --- | --- | --- | --- | --- | --- | --- | --- | --- | --- | --- | --- | --- | --- | --- | --- | --- | --- | --- | --- | --- |
| 1 | 1 | **HITO 0** | 28d | 2016-09-12 A | 2016-10-19 A |  | 100% |  | 2016-09-12 | 2016-10-19 | 28d |  |  |  |  | 288h | 288h | 2,658.24 | 2,658.24 | 2,658.24 |
| 2 | 1.1 | **ITERACIÓN 1** | 8d | 2016-09-12 A | 2016-09-21 A |  | 100% |  | 2016-09-12 | 2016-09-21 | 8d |  |  |  |  | 48h | 48h | 443.04 | 443.04 | 443.04 |
| 3 | 1.1.1 | [PM]Rellenar documento de Concepto del proyecto | 8d | 2016-09-12 A | 2016-09-21 A |  | 100% |  | 2016-09-12 | 2016-09-21 | 8d |  |  |  | DAVID SEGARRA; HÉCTOR MEDINA; IVAN PINA; JAUME LLORET; PABLO TORREGROSA; SAMUEL NAVARRO | 48h | 48h | 443.04 | 443.04 | 443.04 |
| 4 | 1.2 | **ITERACIÓN 2** | 10d | 2016-09-22 A | 2016-10-05 A | 2 | 100% |  | 2016-09-22 | 2016-10-05 | 10d |  |  |  |  | 96h | 96h | 886.08 | 886.08 | 886.08 |
| 5 | 1.2.1 | [PM]Rellenar versión inicial del documento Especificación | 10d | 2016-09-22 A | 2016-10-05 A |  | 100% |  | 2016-09-22 | 2016-10-05 | 10d |  |  |  | DAVID SEGARRA; HÉCTOR MEDINA; IVAN PINA; JAUME LLORET; PABLO TORREGROSA; SAMUEL NAVARRO | 96h | 96h | 886.08 | 886.08 | 886.08 |
| 6 | 1.3 | **ITERACIÓN 3** | 10d | 2016-10-06 A | 2016-10-19 A | 4 | 100% |  | 2016-10-06 | 2016-10-19 | 10d |  |  |  |  | 144h | 144h | 1,329.12 | 1,329.12 | 1,329.12 |
| 7 | 1.3.1 | [PM]Completar y revisar documento Especificación. | 5d | 2016-10-06 A | 2016-10-12 A |  | 100% |  | 2016-10-06 | 2016-10-12 | 5d |  |  |  | IVAN PINA; JAUME LLORET; PABLO TORREGROSA; SAMUEL NAVARRO | 64h | 64h | 590.72 | 590.72 | 590.72 |
| 8 | 1.3.2 | [PM]Elaborar el Presupuesto (hoja de cálculo) | 2d | 2016-10-13 A | 2016-10-14 A | 7 | 100% |  | 2016-10-13 | 2016-10-14 | 2d |  |  |  | DAVID SEGARRA; HÉCTOR MEDINA | 32h | 32h | 295.36 | 295.36 | 295.36 |
| 9 | 1.3.3 | [PM]Crear WBS del proyecto en Project. | 1d | 2016-10-17 A | 2016-10-17 A | 8 | 100% |  | 2016-10-17 | 2016-10-17 | 1d |  |  |  | DAVID SEGARRA; HÉCTOR MEDINA | 16h | 16h | 147.68 | 147.68 | 147.68 |
| 10 | 1.3.4 | [PM]Crear plan general (Tareas y precedencias básicas). en Project | 2d | 2016-10-18 A | 2016-10-19 A | 9 | 100% |  | 2016-10-18 | 2016-10-19 | 2d |  |  |  | DAVID SEGARRA; HÉCTOR MEDINA | 32h | 32h | 295.36 | 295.36 | 295.36 |
| 11 | 2 | **HITO 1** | 52.72d? | 2016-10-20 A | 2017-01-02 | 1 | 56% | 22.98d? | 2016-10-20 | 2016-12-23 | 47d? | 0d |  |  |  | 1169.97h | 564.72h | 10,798.81 | 11,077.05 | 5,212.46 |
| 12 | 2.1 | **ITERACIÓN 1** | 10d | 2016-10-20 A | 2016-11-02 |  | 99% | 0d | 2016-10-20 | 2016-11-02 | 10d | 0d |  |  |  | 36.2h | 36.2h | 334.13 | 334.25 | 334.13 |
| 13 | 2.1.1 | **PM** | 10d | 2016-10-20 A | 2016-11-02 |  | 99% | 0d | 2016-10-20 | 2016-11-02 | 10d | 0d |  |  |  | 36.2h | 36.2h | 334.13 | 334.25 | 334.13 |
| 14 | 2.1.1.1 | **[PM]Planificación** | 4.21d | 2016-10-20 A | 2016-10-26 |  | 99% | 0d | 2016-10-20 | 2016-10-26 | 4.21d | 4.79d |  |  |  | 33h | 33h | 304.59 | 304.71 | 304.59 |
| 15 | 2.1.1.1.1 | **[PM]Detallar plan iteraciones del mes de Noviembre** | 4.21d | 2016-10-20 A | 2016-10-26 |  | 99% | 0d | 2016-10-20 | 2016-10-26 | 4.21d | 4.79d |  |  |  | 33h | 33h | 304.59 | 304.71 | 304.59 |
| 16 | 2.1.1.1.1.1 | Creación subtareas y precedencias en Project. | 16.33h | 2016-10-20 A | 2016-10-24 |  | 99% | 0h | 2016-10-20 | 2016-10-24 | 16.33h | 2.17d | 0d | start no earlier than 2016-10-20 | DAVID SEGARRA; HÉCTOR MEDINA | 16h | 16h | 147.68 | 147.74 | 147.68 |
| 17 | 2.1.1.1.1.2 | Asignar recursos a las tareas en Project. | 17.35h | 2016-10-24 A | 2016-10-26 | 16 | 99% | 0h | 2016-10-24 | 2016-10-26 | 17.35h | 4.79d |  |  | DAVID SEGARRA; HÉCTOR MEDINA | 17h | 17h | 156.91 | 156.97 | 156.91 |
| 18 | 2.1.1.2 | **[PM]Seguimiento** | 10d | 2016-10-20 A | 2016-11-02 A |  | 100% |  | 2016-10-20 | 2016-11-02 | 10d |  |  |  |  | 3.2h | 3.2h | 29.54 | 29.54 | 29.54 |
| 19 | 2.1.1.2.1 | [PM]Regitrar de tiempos y % de realización de tareas en Project. | 80h | 2016-10-20 A | 2016-11-02 A |  | 100% |  | 2016-10-20 | 2016-11-02 | 80h |  |  | finish no earlier than 2016-11-02 | DAVID SEGARRA [2%]; HÉCTOR MEDINA [2%] | 3.2h | 3.2h | 29.54 | 29.54 | 29.54 |
| 20 | 2.2 | **ITERACIÓN 2** | 11d | 2016-11-02 A | 2016-11-16 | 12 | 53% | 5.16d | 2016-11-03 | 2016-11-17 | 10.25d? | 0d |  |  |  | 161.23h | 113.17h | 1,488.16 | 3,389.91 | 1,044.66 |
| 21 | 2.2.1 | **PM** | 11d | 2016-11-02 A | 2016-11-16 |  | 94% | 0.71d | 2016-11-03 | 2016-11-17 | 10.25d? | 0d |  |  |  | 26.35h | 23.12h | 243.19 | 319.17 | 213.38 |
| 22 | 2.2.1.1 | **[PM]Rellenar documento gestión de riesgos.** | 6.44d | 2016-11-02 A | 2016-11-10 |  | 71% | 1.87d | 2016-11-03 | 2016-11-04 | 1.84d? | 3.56d |  |  |  | 14.23h | 11h | 131.35 | 160.97 | 101.54 |
| 23 | 2.2.1.1.1 | Leer documento | 9.07h | 2016-11-02 A | 2016-11-03 A |  | 100% |  | 2016-11-03 | 2016-11-03 | 1.07h |  |  | start no earlier than 2016-11-03 | DAVID SEGARRA | 1h | 1h | 9.23 | 9.23 | 9.23 |
| 24 | 2.2.1.1.2 | Rellenar documento | 4h | 2016-11-04 A | 2016-11-04 A | 23FS+1ed | 100% |  | 2016-11-03 | 2016-11-03 | 4h |  |  |  | DAVID SEGARRA | 4h | 4h | 36.92 | 68.67 | 36.92 |
| 25 | 2.2.1.1.3 | Analizar documento | 3.23h | 2016-11-08 A | 2016-11-09 | 24FS+4ed | 99% | 0.01h | 2016-11-03 | 2016-11-04 | 3.23h? | 0d |  |  | HÉCTOR MEDINA | 3h | 3h | 27.69 | 27.69 | 27.69 |
| 26 | 2.2.1.1.4 | Actulizar documento | 11.23h | 2016-11-09 A | 2016-11-10 | 25FS+1ed | 29% | 8h | 2016-11-04 | 2016-11-04 | 6.45h? | 3.56d |  |  | HÉCTOR MEDINA | 6.23h | 3h | 57.51 | 55.38 | 27.7 |

Notes:
- 11: 757.4 h
- 12: 44.64 h
- 14: 23.04 h
- 15: 23.04 h
- 16: 16.02 h
- 17: 17.02 h
- 18: 21.6 h
- 19: 21.6 h
- 20: 127.24 h
- 22: 21.6 h

| ID | WBS | Task | Duration | Start | Finish | Predecessors | Complete | Remaining | Baseline start | Baseline finish | Baseline duration | Total slack | Free slack | Constraint | Resources | Work | Actual work | Cost | Baseline cost | Actual cost |
| --- | --- | --- | --- | --- | --- | --- | --- | --- | --- | --- | --- | --- | --- | --- | --- | --- | --- | --- | --- | --- |
| 27 | 2.2.1.2 | **[PM]Planificación** | 1d | 2016-11-14 A | 2016-11-14 A |  | 100% |  | 2016-11-03 | 2016-11-16 | 9.12d? |  |  |  |  | 2.52h | 2.52h | 23.24 | 67.38 | 23.24 |
| 28 | 2.2.1.2.1 | **[PM]Detallar plan iteraciones del mes de Noviembre** | 1d | 2016-11-14 A | 2016-11-14 A |  | 100% |  | 2016-11-03 | 2016-11-16 | 9.12d? |  |  |  |  | 2.52h | 2.52h | 23.24 | 67.38 | 23.24 |
| 29 | 2.2.1.2.1.1 | Creación subtareas y precedencias en Project. | 8h | 2016-11-14 A | 2016-11-14 A |  | 100% |  | 2016-11-03 | 2016-11-11 | 56h? |  |  | finish no earlier than 2016-11-14 | HÉCTOR MEDINA [5%] | 0.4h | 0.4h | 3.69 | 51.69 | 3.69 |
| 30 | 2.2.1.2.1.2 | Asignar recursos a las tareas en Project. | 8h | 2016-11-14 A | 2016-11-14 A | 29 | 100% |  | 2016-11-14 | 2016-11-16 | 17h? |  |  | finish no earlier than 2016-11-14 | HÉCTOR MEDINA [5%] | 2.12h | 2.12h | 19.55 | 15.69 | 19.55 |
| 31 | 2.2.1.3 | **[PM]Seguimiento** | 10d | 2016-11-03 A | 2016-11-16 A |  | 100% |  | 2016-11-03 | 2016-11-17 | 10.25d? |  |  |  |  | 9.6h | 9.6h | 88.61 | 90.82 | 88.61 |
| 32 | 2.2.1.3.1 | [PM]Regitrar de tiempos y % de realización de tareas en Project. | 80h | 2016-11-03 A | 2016-11-16 A |  | 100% |  | 2016-11-03 | 2016-11-17 | 82h? |  |  | finish no earlier than 2016-11-16 | DAVID SEGARRA [2%]; HÉCTOR MEDINA [2%]; IVAN PINA [2%]; JAUME LLORET [2%]; PABLO TORREGROSA [2%]; SAMUEL NAVARRO [2%] | 9.6h | 9.6h | 88.61 | 90.82 | 88.61 |
| 33 | 2.2.2 | **V1** | 10d | 2016-11-03 A | 2016-11-16 |  | 54% | 4.63d | 2016-11-03 | 2016-11-08 | 3.86d? | 0d |  |  |  | 44.79h | 20.8h | 413.43 | 939.53 | 191.96 |
| 34 | 2.2.2.1 | **[V1]Documentación de diseño de mecánicas de los NPCs.** | 10d | 2016-11-03 A | 2016-11-16 |  | 30% | 6.97d | 2016-11-03 | 2016-11-07 | 2.04d? | 0d |  |  |  | 21.05h | 9.6h | 194.25 | 295.35 | 88.61 |
| 35 | 2.2.2.1.1 | **Cria de Alien** | 9d | 2016-11-04 A | 2016-11-16 |  | 26% | 6.71d | 2016-11-03 | 2016-11-04 | 1.02d? | 0d |  |  |  | 6.59h | 2h | 60.83 | 73.83 | 18.46 |
| 36 | 2.2.2.1.1.1 | Especificar al detalle mecanicas básicas de Cria de Alien | 3.06h | 2016-11-04 A | 2016-11-04 |  | 33% | 2.04h | 2016-11-03 | 2016-11-03 | 3.06h? | 0.03d | 0d | start no earlier than 2016-11-04 | SAMUEL NAVARRO | 3.04h | 1h | 28.06 | 27.68 | 9.23 |
| 37 | 2.2.2.1.1.2 | Especificar mecanicas especiales de Cria de Alien | 2.04h | 2016-11-04 A | 2016-11-04 | 36 | 13% | 1.78h | 2016-11-03 | 2016-11-03 | 2.04h? | 0.03d | 0d |  | SAMUEL NAVARRO | 2.04h | 0.25h | 18.79 | 18.46 | 2.31 |
| 38 | 2.2.2.1.1.3 | Especificar casos de uso de las mecánicas. | 1.02h | 2016-11-04 A | 2016-11-04 | 37 | 25% | 0.77h | 2016-11-03 | 2016-11-03 | 1.02h? | 0.06d | 0d |  | SAMUEL NAVARRO | 1.02h | 0.25h | 9.37 | 9.23 | 2.31 |
| 39 | 2.2.2.1.1.4 | Dibujar mecanicas de Cria de Alien | 1.88h | 2016-11-16 A | 2016-11-16 | 38FS+12ed | 27% | 1.37h | 2016-11-03 | 2016-11-04 | 2.04h? | -0.17d | 0d |  | SAMUEL NAVARRO | 0.5h | 0.5h | 4.62 | 18.46 | 4.62 |
| 40 | 2.2.2.1.2 | **Alien Soldado** | 1.02d | 2016-11-04 A | 2016-11-07 | 35FS-13ed | 25% | 0.77d | 2016-11-04 | 2016-11-07 | 1.02d? | 6.98d |  |  |  | 4.04h | 2h | 37.3 | 73.84 | 18.46 |
| 41 | 2.2.2.1.2.1 | Especificar al detalle mecanicas básicas de Alien Soldado | 3.06h | 2016-11-04 A | 2016-11-04 |  | 33% | 2.04h | 2016-11-04 | 2016-11-04 | 3.06h? | 0.06d | 0d |  | SAMUEL NAVARRO | 1h | 1h | 9.23 | 27.69 | 9.23 |
| 42 | 2.2.2.1.2.2 | Especificar mecanicas especiales de Alien Soldado | 2.04h | 2016-11-04 A | 2016-11-04 | 41 | 25% | 1.53h | 2016-11-04 | 2016-11-04 | 2.04h? | 0.06d | 0d |  | SAMUEL NAVARRO | 0.5h | 0.5h | 4.62 | 18.46 | 4.62 |
| 43 | 2.2.2.1.2.3 | Especificar casos de uso de las mecánicas. | 1.02h | 2016-11-04 A | 2016-11-04 | 42 | 50% | 0.51h | 2016-11-04 | 2016-11-04 | 1.02h? | 6.98d | 0d |  | SAMUEL NAVARRO | 0.5h | 0.5h | 4.62 | 9.23 | 4.62 |
| 44 | 2.2.2.1.2.4 | Dibujar mecanicas de Alien Soldado | 2.04h | 2016-11-04 | 2016-11-07 | 43 |  |  | 2016-11-04 | 2016-11-07 | 2.04h? | 6.98d |  |  | SAMUEL NAVARRO | 2.04h |  | 18.84 | 18.46 |  |
| 45 | 2.2.2.1.3 | **Alien Berserker** | 2d | 2016-11-03 A | 2016-11-04 |  | 36% | 1.29d | 2016-11-03 | 2016-11-04 | 1.02d? | 0d |  |  |  | 4.55h | 2.8h | 42.04 | 73.84 | 25.85 |
| 46 | 2.2.2.1.3.1 | Especificar al detalle mecanicas básicas de Alien Berserker | 3.06h | 2016-11-03 A | 2016-11-03 |  | 33% | 2.04h | 2016-11-03 | 2016-11-03 | 3.06h? | 0.1d | 0d | start no earlier than 2016-11-03 | IVAN PINA | 2.75h | 1h | 25.41 | 27.69 | 9.23 |
| 47 | 2.2.2.1.3.2 | Especificar mecanicas especiales de Alien Berserker | 2.04h | 2016-11-03 A | 2016-11-03 | 46 | 38% | 1.27h | 2016-11-03 | 2016-11-03 | 2.04h? | 0.1d | 0d |  | IVAN PINA | 0.75h | 0.75h | 6.93 | 18.46 | 6.93 |
| 48 | 2.2.2.1.3.3 | Especificar casos de uso de las mecánicas. | 1.02h | 2016-11-03 A | 2016-11-03 | 47 | 75% | 0.26h | 2016-11-03 | 2016-11-03 | 1.02h? | 0.04d | 0d |  | IVAN PINA | 0.75h | 0.75h | 6.92 | 9.23 | 6.92 |
| 49 | 2.2.2.1.3.4 | Dibujar mecanicas de Alien Berserker | 1.88h | 2016-11-04 A | 2016-11-04 | 48FS+1ed | 16% | 1.57h | 2016-11-03 | 2016-11-04 | 2.04h? | 0d |  | finish no earlier than 2016-11-04 | IVAN PINA | 0.3h | 0.3h | 2.78 | 18.46 | 2.78 |
| 50 | 2.2.2.1.4 | **Alien Jefe** | 1.25d | 2016-11-04 A | 2016-11-07 | 45FS-1ed | 35% | 0.82d | 2016-11-04 | 2016-11-07 | 1.02d? | 6.75d |  |  |  | 5.86h | 2.8h | 54.09 | 73.84 | 25.84 |
| 51 | 2.2.2.1.4.1 | Especificar al detalle mecanicas básicas de Alien Jefe | 3.06h | 2016-11-04 A | 2016-11-04 |  | 33% | 2.04h | 2016-11-04 | 2016-11-04 | 3.06h? | 0.06d | 0d |  | IVAN PINA | 3.04h | 1h | 28.06 | 27.69 | 9.23 |
| 52 | 2.2.2.1.4.2 | Especificar mecanicas especiales de Alien Jefe | 2.04h | 2016-11-04 A | 2016-11-04 | 51 | 25% | 1.53h | 2016-11-04 | 2016-11-04 | 2.04h? | 7.36d |  |  | IVAN PINA | 1.52h | 0.5h | 14.03 | 18.46 | 4.62 |
| 53 | 2.2.2.1.4.3 | Especificar casos de uso de las mecánicas. | 1.02h | 2016-11-04 A | 2016-11-04 A | 52 | 100% |  | 2016-11-04 | 2016-11-04 | 1.02h? |  |  |  | IVAN PINA | 1h | 1h | 9.23 | 9.23 | 9.23 |
| 54 | 2.2.2.1.4.4 | Dibujar mecanicas de Alien Jefe | 2.04h | 2016-11-07 A | 2016-11-07 | 53FS+1ed | 15% | 1.73h | 2016-11-04 | 2016-11-07 | 2.04h? | 6.75d |  |  | IVAN PINA | 0.3h | 0.3h | 2.77 | 18.46 | 2.77 |

Notes:
- 27: 23.04 h
- 28: 23.04 h
- 29: 16.02 h
- 30: 17.02 h
- 31: 21.6 h
- 32: 21.6 h
- 34: 12 h

| ID | WBS | Task | Duration | Start | Finish | Predecessors | Complete | Remaining | Baseline start | Baseline finish | Baseline duration | Total slack | Free slack | Constraint | Resources | Work | Actual work | Cost | Baseline cost | Actual cost |
| --- | --- | --- | --- | --- | --- | --- | --- | --- | --- | --- | --- | --- | --- | --- | --- | --- | --- | --- | --- | --- |
| 55 | 2.2.2.2 | **[V1]Documento de diseño técnico de la arquitectura de IA** | 1.27d | 2016-11-07 A | 2016-11-08 | 34FS-11ed | 36% | 0.81d | 2016-11-07 | 2016-11-08 | 1.28d? | 0d |  |  |  | 11.67h | 3.2h | 107.7 | 182.68 | 29.53 |
| 56 | 2.2.2.2.1 | Especificar IA de Cria de Alien | 5h | 2016-11-07 A | 2016-11-07 |  | 12% | 4.39h | 2016-11-07 | 2016-11-07 | 5h? | 0.08d | 0d |  | SAMUEL NAVARRO | 0.6h | 0.6h | 5.54 | 45.19 | 5.54 |
| 57 | 2.2.2.2.2 | Especificar IA de Alien Soldado | 5h | 2016-11-07 A | 2016-11-08 | 56 | 12% | 4.39h | 2016-11-07 | 2016-11-08 | 5h? | 0.03d |  |  | SAMUEL NAVARRO | 4.99h | 0.6h | 46.04 | 45.19 | 5.53 |
| 58 | 2.2.2.2.3 | Especificar IA de Alien Berserker | 5.1h | 2016-11-07 A | 2016-11-07 A |  | 100% |  | 2016-11-07 | 2016-11-07 | 5.1h? |  |  |  | IVAN PINA | 1h | 1h | 9.23 | 46.15 | 9.23 |
| 59 | 2.2.2.2.4 | Especificar IA de Alien Jefe | 5.1h | 2016-11-07 A | 2016-11-08 | 58 | 20% | 4.08h | 2016-11-07 | 2016-11-08 | 5.1h? | 0d |  |  | IVAN PINA | 5.08h | 1h | 46.89 | 46.15 | 9.23 |
| 60 | 2.2.2.3 | **[V1]Documento de diseño de sistemas de toma de decisión** | 7d | 2016-11-07 A | 2016-11-15 |  | 70% | 2.07d | 2016-11-03 | 2016-11-04 | 1.28d? | 0d |  |  |  | 12.08h | 8h | 111.48 | 184.6 | 73.81 |
| 61 | 2.2.2.3.1 | Crear diagrama de toma de decisiones | 56h | 2016-11-07 A | 2016-11-15 |  | 74% | 14.78h | 2016-11-03 | 2016-11-03 | 4.08h? | 0d |  | start no earlier than 2016-11-03 | JAUME LLORET; PABLO TORREGROSA | 5.25h | 2.7h | 48.47 | 73.84 | 24.92 |
| 62 | 2.2.2.3.2 | Especificar las tomas de decisiones, de Protagonista | 2.04h | 2016-11-11 A | 2016-11-11 | 61FS-5ed | 25% | 1.53h | 2016-11-03 | 2016-11-03 | 2.04h? | 2.75d |  |  | JAUME LLORET | 0.5h | 0.5h | 4.62 | 18.46 | 4.62 |
| 63 | 2.2.2.3.3 | Especificar las tomas de decisiones, de Cria de Alien | 2.04h | 2016-11-14 A | 2016-11-14 | 61FS-4ed | 25% | 1.53h | 2016-11-03 | 2016-11-03 | 2.04h? | 0.04d | 0d |  | PABLO TORREGROSA | 2.03h | 0.5h | 18.74 | 18.46 | 4.62 |
| 64 | 2.2.2.3.4 | Especificar las tomas de decisiones, de Alien Berserker | 2.04h | 2016-11-11 A | 2016-11-11 A | 62 | 100% |  | 2016-11-03 | 2016-11-04 | 2.04h? |  |  |  | JAUME LLORET | 2h | 2h | 18.46 | 18.46 | 18.46 |
| 65 | 2.2.2.3.5 | Especificar las tomas de decisiones, de Alien Soldado | 2.04h | 2016-11-14 A | 2016-11-14 | 63 | 15% | 1.73h | 2016-11-03 | 2016-11-04 | 2.04h? | 1.49d |  |  | PABLO TORREGROSA | 0.3h | 0.3h | 2.77 | 18.46 | 2.77 |
| 66 | 2.2.2.3.6 | Especificar las tomas de decisiones, de Alien Jefe | 2.08h | 2016-11-14 A | 2016-11-14 A | 64, 65 | 100% |  | 2016-11-04 | 2016-11-04 | 2.08h? |  |  |  | JAUME LLORET | 2h | 2h | 18.43 | 36.92 | 18.43 |
| 67 | 2.2.3 | **V2** | 6d | 2016-11-09 A | 2016-11-16 |  | 20% | 4.82d | 2016-11-03 | 2016-11-17 | 10.02d? | 0d |  |  |  | 70.6h | 49.77h | 651.64 | 1,675.24 | 459.39 |
| 68 | 2.2.3.1 | **[V2]Mecánicas básicas entidades sin IA.** | 3.96d | 2016-11-10 A | 2016-11-15 | 89FS+1ed | 46% | 2.12d | 2016-11-09 | 2016-11-14 | 3.83d? | 0d |  |  |  | 16.33h | 12.25h | 150.73 | 553.8 | 113.07 |
| 69 | 2.2.3.1.1 | Estudiar mecánicas | 5.1h | 2016-11-10 A | 2016-11-10 |  | 15% | 4.33h | 2016-11-09 | 2016-11-09 | 5.1h? | 3.32d |  |  | IVAN PINA | 0.75h | 0.75h | 6.92 | 92.3 | 6.92 |
| 70 | 2.2.3.1.2 | Programar mecánicas | 8h | 2016-11-14 A | 2016-11-14 A | 69 | 100% |  | 2016-11-09 | 2016-11-11 | 15.31h? |  |  | finish no earlier than 2016-12-20 | IVAN PINA; SAMUEL NAVARRO | 10.5h | 10.5h | 96.92 | 276.9 | 96.92 |
| 71 | 2.2.3.1.3 | Realizar pruebas | 8h | 2016-11-15 A | 2016-11-15 | 70 | 13% | 6.98h | 2016-11-11 | 2016-11-14 | 5.1h? | 0d |  | finish no earlier than 2016-11-15 | IVAN PINA | 5.08h | 1h | 46.89 | 92.3 | 9.23 |
| 72 | 2.2.3.2 | **[V2]Diseño e implementación de la Arquitectura basada en componentes.** | 3.49d | 2016-11-11 A | 2016-11-16 | 99FS-6ed | 32% | 2.36d | 2016-11-07 | 2016-11-17 | 7.23d? | 0d |  |  |  | 46.29h | 34.02h | 427.26 | 1,121.44 | 314.02 |
| 73 | 2.2.3.2.1 | Realizar esquemas | 3.92h | 2016-11-11 A | 2016-11-11 A |  | 100% |  | 2016-11-07 | 2016-11-10 | 17.78h? |  |  | finish no earlier than 2016-11-11 | JAUME LLORET; PABLO TORREGROSA | 6.53h | 6.53h | 60.24 | 295.36 | 60.24 |
| 74 | 2.2.3.2.2 | Realizar diagrama | 16h | 2016-11-14 A | 2016-11-15 | 73 | 36% | 10.19h | 2016-11-10 | 2016-11-14 | 16.33h? | 0d |  | finish no earlier than 2016-11-15 | JAUME LLORET; PABLO TORREGROSA | 23.76h | 11.5h | 219.35 | 295.36 | 106.15 |
| 75 | 2.2.3.2.3 | Implementación | 2d | 2016-11-15 A | 2016-11-16 | 74FS-1ed | 12% | 1.76d | 2016-11-14 | 2016-11-15 | 11.73h? | -1d | 0d |  | JAUME LLORET | 16h | 15.99h | 147.68 | 212.29 | 147.63 |
| 76 | 2.2.3.3 | **[V2]Formato propio para la definición de los niveles (documento con la especificación del formato)** | 4.75d | 2016-11-09 A | 2016-11-15 |  | 5% | 4.51d | 2016-11-03 | 2016-11-03 | 1d? | 0.25d |  |  |  | 7.98h | 3.5h | 73.65 |  | 32.3 |
| 77 | 2.2.3.3.1 | Leer documento | 4.19d | 2016-11-09 A | 2016-11-15 |  | 4% | 4d | 2016-11-03 | 2016-11-03 | 1d? | 0d |  |  | DAVID SEGARRA | 1.52h | 1.5h | 14.03 |  | 13.85 |
| 78 | 2.2.3.3.2 | Rellenar documento | 4.56d | 2016-11-09 A | 2016-11-15 | 77 | 6% | 4.3d | 2016-11-03 | 2016-11-03 | 1d? | 0.25d |  | finish no earlier than 2016-11-09 | DAVID SEGARRA | 6.46h | 2h | 59.62 |  | 18.45 |

Notes:
- 55: 20 h
- 60: 14 h
- 68: 30 h
- 72: 55 h

| ID | WBS | Task | Duration | Start | Finish | Predecessors | Complete | Remaining | Baseline start | Baseline finish | Baseline duration | Total slack | Free slack | Constraint | Resources | Work | Actual work | Cost | Baseline cost | Actual cost |
| --- | --- | --- | --- | --- | --- | --- | --- | --- | --- | --- | --- | --- | --- | --- | --- | --- | --- | --- | --- | --- |
| 79 | 2.2.4 | **PD** | 0.26d | 2016-11-14 A | 2016-11-14 A |  | 100% |  |  |  |  |  |  |  |  | 2.1h | 2.1h | 19.38 |  | 19.38 |
| 80 | 2.2.4.1 | **[PD]I1. Video con animación del logo de la empresa** | 0.26d | 2016-11-14 A | 2016-11-14 A |  | 100% |  |  |  |  |  |  |  |  | 2.1h | 2.1h | 19.38 |  | 19.38 |
| 81 | 2.2.4.1.1 | Diseñar en papel de diferentes logos | 2.1h | 2016-11-14 A | 2016-11-14 A |  | 100% |  |  |  |  |  |  | start no earlier than 2016-11-14 | DAVID SEGARRA; SAMUEL NAVARRO | 2.1h | 2.1h | 19.38 |  | 19.38 |
| 82 | 2.2.5 | **RV** | 5.26d | 2016-11-07 A | 2016-11-14 |  | 35% | 3.43d | 2016-11-04 | 2016-11-17 | 8.81d? | 1.74d |  |  |  | 17.39h | 17.39h | 160.51 | 455.96 | 160.54 |
| 83 | 2.2.5.1 | **[RV]I1. Boceto de lo personajes.** | 3.46d | 2016-11-07 A | 2016-11-10 | 27FS-29ed | 21% | 2.74d | 2016-11-16 | 2016-11-17 | 0.97d? | 3.54d |  |  |  | 6.25h | 6.25h | 57.69 | 132.91 | 57.7 |
| 84 | 2.2.5.1.1 | Dibujar Cría de Alien, diferentes perspectivas | 8h | 2016-11-07 A | 2016-11-07 |  | 19% | 6.5h | 2016-11-16 | 2016-11-16 | 2.58h? | 0d |  | finish no earlier than 2016-11-07 | DAVID SEGARRA | 1.5h | 1.5h | 13.85 | 22.15 | 13.85 |
| 85 | 2.2.5.1.2 | Dibujar Alien Soldado, diferentes perspectivas | 8h | 2016-11-08 A | 2016-11-08 | 84FS+1ed | 25% | 6h | 2016-11-16 | 2016-11-16 | 2.58h? | 1.19d | 1d | finish no earlier than 2016-11-08 | DAVID SEGARRA | 2h | 2h | 18.46 | 22.15 | 18.46 |
| 86 | 2.2.5.1.3 | Dibujar Alien Berserker, diferentes perspectivas | 8h | 2016-11-09 A | 2016-11-09 |  | 9% | 7.25h | 2016-11-16 | 2016-11-16 | 2.58h? | 0.06d | 0d | finish no earlier than 2016-11-09 | DAVID SEGARRA | 0.75h | 0.75h | 6.92 | 22.15 | 6.93 |
| 87 | 2.2.5.1.4 | Dibujar Alien Jefe, diferentes perspectivas | 2.58h | 2016-11-10 A | 2016-11-10 | 86 | 19% | 2.08h | 2016-11-16 | 2016-11-16 | 2.58h? | -0.14d | 0d |  | HÉCTOR MEDINA | 0.5h | 0.5h | 4.62 | 22.15 | 4.62 |
| 88 | 2.2.5.1.5 | Dibujar Personaje principal, diferentes perspectivas | 3.66h | 2016-11-10 A | 2016-11-10 | 87, 85 | 41% | 2.16h | 2016-11-16 | 2016-11-17 | 2.58h? | 3.54d |  | start no later than 2016-11-10 | DAVID SEGARRA | 1.5h | 1.5h | 13.85 | 44.3 | 13.85 |
| 89 | 2.2.5.2 | **[RV]I6. Bocetos de los elementos.** | 0.64d | 2016-11-07 A | 2016-11-07 | 55FS-1ed | 43% | 0.36d | 2016-11-08 | 2016-11-09 | 0.77d? | 1.13d |  |  |  | 3.64h | 3.64h | 33.6 | 101.53 | 33.62 |
| 90 | 2.2.5.2.1 | Dibujar metralleta, diferentes perspectivas | 1.02h | 2016-11-07 A | 2016-11-07 |  | 49% | 0.52h | 2016-11-08 | 2016-11-08 | 1.02h? | 0.04d | 0d |  | IVAN PINA | 0.5h | 0.5h | 4.62 | 9.23 | 4.62 |
| 91 | 2.2.5.2.2 | Dibujar Fúsil Laser, diferentes perspecgivas | 1.02h | 2016-11-07 A | 2016-11-07 | 90 | 30% | 0.71h | 2016-11-08 | 2016-11-08 | 1.02h? | 0.06d | 0d |  | IVAN PINA [98%] | 0.3h | 0.3h | 2.77 | 9.23 | 2.78 |
| 92 | 2.2.5.2.3 | Dibujar Escopeta, diferentes perspectivas | 1.02h | 2016-11-07 A | 2016-11-07 | 91 | 44% | 0.57h | 2016-11-08 | 2016-11-08 | 1.02h? | 0.01d | 0d |  | IVAN PINA | 0.45h | 0.45h | 4.15 | 9.23 | 4.16 |
| 93 | 2.2.5.2.4 | Dibujar Llaves, diferentes perspectivas | 1.02h | 2016-11-07 A | 2016-11-07 | 92 | 10% | 0.92h | 2016-11-08 | 2016-11-08 | 1.02h? | 0.01d | 0d |  | IVAN PINA | 0.1h | 0.1h | 0.92 | 9.23 | 0.93 |
| 94 | 2.2.5.2.5 | Dibujar Munición pistola y cuchillo, diferentes perspectivas | 1.02h | 2016-11-07 A | 2016-11-07 | 93 | 10% | 0.92h | 2016-11-08 | 2016-11-08 | 1.02h? | 1.13d |  |  | IVAN PINA | 0.1h | 0.1h | 0.92 | 9.23 | 0.93 |
| 95 | 2.2.5.2.6 | Dibujar Munición lanzagranadas, diferentes perspectivas | 1.02h | 2016-11-07 A | 2016-11-07 |  | 10% | 0.92h | 2016-11-08 | 2016-11-08 | 1.02h? | 0.09d | 0d |  | IVAN PINA | 0.1h | 0.1h | 0.92 | 9.23 | 0.92 |
| 96 | 2.2.5.2.7 | Dibujar Pistola, diferentes perspectivas | 1.02h | 2016-11-07 A | 2016-11-07 | 95 | 74% | 0.27h | 2016-11-08 | 2016-11-08 | 1.02h? | 1.51d |  |  | SAMUEL NAVARRO | 0.74h | 0.74h | 6.83 | 9.23 | 6.83 |
| 97 | 2.2.5.2.8 | Dibujar Lanzagranadas, diferentes perspectivas | 1.02h | 2016-11-07 A | 2016-11-07 A | 96 | 100% |  | 2016-11-08 | 2016-11-08 | 1.02h? |  |  |  | SAMUEL NAVARRO | 0.75h | 0.75h | 6.92 | 9.23 | 6.92 |
| 98 | 2.2.5.2.9 | Dibujar Munición metralleta, diferentes perspectivas | 1.02h | 2016-11-07 A | 2016-11-07 | 97 | 59% | 0.42h | 2016-11-08 | 2016-11-08 | 1.02h? | 1.25d |  |  | SAMUEL NAVARRO | 0.6h | 0.6h | 5.54 | 9.23 | 5.54 |
| 99 | 2.2.5.3 | **[RV]I7. Boceto del entorno.** | 1.26d | 2016-11-11 A | 2016-11-14 | 60FS-5ed | 69% | 0.39d | 2016-11-04 | 2016-11-07 | 1.51d? | 1.74d |  |  |  | 7.5h | 7.5h | 69.22 | 221.52 | 69.23 |
| 100 | 2.2.5.3.1 | Diseñar en papel del mapa | 4.08h | 2016-11-11 A | 2016-11-11 |  | 25% | 3.08h | 2016-11-04 | 2016-11-04 | 4.08h? | 2.49d |  |  | JAUME LLORET; PABLO TORREGROSA | 2h | 2h | 18.46 | 73.84 | 18.46 |
| 101 | 2.2.5.3.2 | Diseñar habitaciones del mapa con detalle | 6h | 2016-11-11 A | 2016-11-14 A | 100 | 100% |  | 2016-11-04 | 2016-11-07 | 6h? |  |  |  | PABLO TORREGROSA | 5.5h | 5.5h | 50.77 | 110.76 | 50.77 |
| 102 | 2.3 | **ITERACIÓN 3** | 13.54d | 2016-11-16 A | 2016-12-05 | 20 | 58% | 5.63d | 2016-11-17 | 2016-11-30 | 9d? | 0d |  |  |  | 227.14h | 218.78h | 2,096.5 | 2,577.94 | 2,019.34 |
| 103 | 2.3.1 | **PM** | 9.89d | 2016-11-17 A | 2016-12-01 |  | 99% | 0.04d | 2016-11-17 | 2016-11-30 | 9d? | 0d |  |  |  | 14.69h | 14.63h | 135.59 | 179.25 | 135.03 |
| 104 | 2.3.1.1 | **[PM]Planificación** | 5.89d | 2016-11-23 A | 2016-12-01 A |  | 100% |  | 2016-11-23 | 2016-11-24 | 1.38d? |  |  |  |  | 6.05h | 6.05h | 55.84 | 99.5 | 55.84 |
| 105 | 2.3.1.1.1 | [PM][I3]Detallar plan iteraciones del mes de Noviembre-Diciembre. | 47.15h | 2016-11-23 A | 2016-12-01 A | 119 | 100% |  | 2016-11-23 | 2016-11-24 | 1.38d? |  |  | finish no earlier than 2016-11-28 | HÉCTOR MEDINA; DAVID SEGARRA | 6.05h | 6.05h | 55.84 | 99.5 | 55.84 |

Notes:
- 83: 12 h
- 89: 12 h
- 99: 12 h
- 102: 252.24 h
- 104: 23.04 h
- 105: 23.04 h

| ID | WBS | Task | Duration | Start | Finish | Predecessors | Complete | Remaining | Baseline start | Baseline finish | Baseline duration | Total slack | Free slack | Constraint | Resources | Work | Actual work | Cost | Baseline cost | Actual cost |
| --- | --- | --- | --- | --- | --- | --- | --- | --- | --- | --- | --- | --- | --- | --- | --- | --- | --- | --- | --- | --- |
| 106 | 2.3.1.2 | **[PM][I3]Seguimiento** | 9d | 2016-11-17 A | 2016-11-30 |  | 99% | 0.06d | 2016-11-17 | 2016-11-30 | 9d? | 0.75d |  |  |  | 8.64h | 8.58h | 79.75 | 79.75 | 79.19 |
| 107 | 2.3.1.2.1 | [PM]Regitrar de tiempos y % de realización de tareas en Project. | 9d | 2016-11-17 A | 2016-11-30 |  | 99% | 0.06d | 2016-11-17 | 2016-11-30 | 9d? | 0.75d |  |  | DAVID SEGARRA [2%]; IVAN PINA [2%]; JAUME LLORET [2%]; PABLO TORREGROSA [2%]; SAMUEL NAVARRO [2%]; HÉCTOR MEDINA [2%] | 8.64h | 8.58h | 79.75 | 79.75 | 79.19 |
| 108 | 2.3.2 | **PD** | 9.75d | 2016-11-17 A | 2016-11-30 |  | 9% | 8.89d | 2016-11-17 | 2016-11-17 | 0.5d? | 0d |  |  |  | 20.4h | 20.4h | 188.29 | 108.54 | 188.29 |
| 109 | 2.3.2.1 | **[PD]I1. Video con animación del logo de la empresa** | 9.75d | 2016-11-17 A | 2016-11-30 |  | 9% | 8.89d | 2016-11-17 | 2016-11-17 | 0.5d? | 0d |  |  |  | 20.4h | 20.4h | 188.29 | 108.54 | 188.29 |
| 110 | 2.3.2.1.1 | Diseñar en papel de diferentes logos | 1.35h | 2016-11-17 A | 2016-11-17 |  | 74% | 0.35h | 2016-11-17 | 2016-11-17 | 1h? | -0.04d | 0d |  | SAMUEL NAVARRO; DAVID SEGARRA | 1.35h | 1.35h | 12.46 | 27.14 | 12.46 |
| 111 | 2.3.2.1.2 | Digitalizar logotipo | 24h | 2016-11-28 A | 2016-11-30 |  | 2% | 23.5h | 2016-11-17 | 2016-11-17 | 0.5h? | -2.94d | 0d |  | HÉCTOR MEDINA | 4.55h | 4.55h | 42 | 13.57 | 42 |
| 112 | 2.3.2.1.3 | Procesar imagen digitalmente | 14.5h | 2016-11-17 A | 2016-11-21 | 111 | 14% | 12.5h | 2016-11-17 | 2016-11-17 | 2h? | -1.56d | 0d |  | SAMUEL NAVARRO | 14.5h | 14.5h | 133.84 | 54.27 | 133.84 |
| 113 | 2.3.3 | **V1** | 12.29d | 2016-11-17 A | 2016-12-05 |  | 7% | 11.37d | 2016-11-17 | 2016-11-18 | 1.25d? | 0d |  |  |  | 43.15h | 34.85h | 398.27 | 271.36 | 321.67 |
| 114 | 2.3.3.1 | **[V1]Gestión de estados de la IA con Máquina de Estados.** | 12.29d | 2016-11-17 A | 2016-12-05 |  | 7% | 11.37d | 2016-11-17 | 2016-11-18 | 1.25d? | 0d |  |  |  | 43.15h | 34.85h | 398.27 | 271.36 | 321.67 |
| 115 | 2.3.3.1.1 | Estudiar algoritmo | 42.3h | 2016-11-17 A | 2016-11-24 |  | 5% | 40.3h | 2016-11-17 | 2016-11-17 | 2h? | -3.54d | 0d |  | PABLO TORREGROSA; IVAN PINA | 12.15h | 3.85h | 112.14 | 54.27 | 35.54 |
| 116 | 2.3.3.1.2 | Programar algoritmo | 92.3h | 2016-11-18 A | 2016-12-05 | 115 | 9% | 84.3h | 2016-11-17 | 2016-11-17 | 4h? | -9.4d | 0d |  | PABLO TORREGROSA; IVAN PINA | 31h | 31h | 286.13 | 108.54 | 286.13 |
| 117 | 2.3.4 | **V2** | 11d | 2016-11-16 A | 2016-11-30 |  | 75% | 2.77d | 2016-11-17 | 2016-11-28 | 7.12d? | 0d |  |  |  | 148.9h | 148.9h | 1,374.35 | 2,018.79 | 1,374.35 |
| 118 | 2.3.4.1 | [V2]Diseño e implementación de la Arquitectura basada en componentes. | 9d | 2016-11-17 A | 2016-11-30 A | 72 | 100% |  |  |  |  |  |  |  | JAUME LLORET | 72h | 72h | 664.56 |  | 664.56 |
| 119 | 2.3.4.2 | **[V2]Control del player por motor de físicas 2D, Dynamic o kinematic** | 11d | 2016-11-16 A | 2016-11-30 | 109 | 65% | 3.81d | 2016-11-17 | 2016-11-23 | 3.5d? | 0d |  |  |  | 69.5h | 69.5h | 641.49 | 759.81 | 641.49 |
| 120 | 2.3.4.2.1 | Incluir motor de físicas | 72h | 2016-11-18 A | 2016-11-30 |  | 29% | 50.95h | 2016-11-17 | 2016-11-18 | 8h? | 0d |  | finish no earlier than 2016-11-30 | HÉCTOR MEDINA; DAVID SEGARRA | 18.3h | 18.3h | 168.91 | 217.09 | 168.91 |
| 121 | 2.3.4.2.2 | Programar mecánicas | 80h | 2016-11-16 A | 2016-11-29 | 120 | 98% | 1.65h | 2016-11-18 | 2016-11-21 | 10h? | 1d |  | finish no earlier than 2016-11-30 | HÉCTOR MEDINA; SAMUEL NAVARRO; DAVID SEGARRA | 51.2h | 51.2h | 472.58 | 271.36 | 472.58 |
| 122 | 2.3.4.3 | **[V2]Mecánicas de acción.** | 1.86d | 2016-11-22 A | 2016-11-23 | 114 | 50% | 0.93d | 2016-11-18 | 2016-11-24 | 3.75d? | 5d |  |  |  | 7.4h | 7.4h | 68.3 | 814.09 | 68.3 |
| 123 | 2.3.4.3.1 | Programar mecánicas | 1.86d | 2016-11-22 A | 2016-11-23 |  | 50% | 0.93d | 2016-11-21 | 2016-11-22 | 15h? | 5d |  | finish no earlier than 2016-11-23 | DAVID SEGARRA | 7.4h | 7.4h | 68.3 | 407.04 | 68.3 |
| 124 | 2.4 | **ITERACIÓN 4** | 11.91d | 2016-12-01 A | 2016-12-16 | 102 | 79% | 2.55d | 2016-11-30 | 2016-12-14 | 10.75d? | 0d |  |  |  | 144.72h | 138.97h | 1,335.77 | 2,841.82 | 1,282.69 |
| 125 | 2.4.1 | **PM** | 10d | 2016-12-01 A | 2016-12-14 A |  | 100% |  | 2016-12-01 | 2016-12-14 | 10d? |  |  |  |  | 14.35h | 14.35h | 132.45 | 233.33 | 132.45 |
| 126 | 2.4.1.1 | **[PM]Planificación** | 1d | 2016-12-05 A | 2016-12-05 A |  | 100% |  | 2016-12-01 | 2016-12-02 | 2d? |  |  |  |  | 4.75h | 4.75h | 43.84 | 144.73 | 43.84 |
| 127 | 2.4.1.1.1 | [PM]Detallar plan iteraciones del mes de Noviembre-Diciembre. | 8h | 2016-12-05 A | 2016-12-05 A |  | 100% |  | 2016-12-01 | 2016-12-02 | 2d? |  |  |  | HÉCTOR MEDINA | 4.75h | 4.75h | 43.84 | 144.73 | 43.84 |
| 128 | 2.4.1.2 | **[PM]Seguimiento** | 10d | 2016-12-01 A | 2016-12-14 A |  | 100% |  | 2016-12-01 | 2016-12-14 | 10d? |  |  |  |  | 9.6h | 9.6h | 88.61 | 88.61 | 88.61 |
| 129 | 2.4.1.2.1 | [PM]Regitrar de tiempos y % de realización de tareas en Project. | 10d | 2016-12-01 A | 2016-12-14 A |  | 100% |  | 2016-12-01 | 2016-12-14 | 10d? |  |  | start no earlier than 2016-12-01 | DAVID SEGARRA [2%]; HÉCTOR MEDINA [2%]; IVAN PINA [2%]; JAUME LLORET [2%]; PABLO TORREGROSA [2%]; SAMUEL NAVARRO [2%] | 9.6h | 9.6h | 88.61 | 88.61 | 88.61 |

Notes:
- 106: 21.6 h
- 107: 21.6 h
- 109: 20 h
- 114: 10 h
- 119: 28 h
- 122: 30 h
- 124: 216.64 h
- 126: 23.04 h
- 127: 23.04 h
- 128: 21.6 h
- 129: 21.6 h

| ID | WBS | Task | Duration | Start | Finish | Predecessors | Complete | Remaining | Baseline start | Baseline finish | Baseline duration | Total slack | Free slack | Constraint | Resources | Work | Actual work | Cost | Baseline cost | Actual cost |
| --- | --- | --- | --- | --- | --- | --- | --- | --- | --- | --- | --- | --- | --- | --- | --- | --- | --- | --- | --- | --- |
| 130 | 2.4.2 | **V1** | 11.56d | 2016-12-01 A | 2016-12-16 |  | 39% | 7.09d | 2016-11-30 | 2016-12-05 | 3d? | 0d |  |  |  | 37.3h | 31.55h | 344.28 | 180.91 | 291.21 |
| 131 | 2.4.2.1 | [V1]Gestión de estados de la IA con Máquina de Estados. | 1.12d | 2016-12-05 A | 2016-12-08 A |  | 100% |  |  |  |  |  |  |  | IVAN PINA | 9h | 9h | 83.07 |  | 83.07 |
| 132 | 2.4.2.2 | **[V1]Sistema de toma de decisiones con Behaviour Trees** | 11.56d | 2016-12-01 A | 2016-12-16 |  | 34% | 7.67d | 2016-12-02 | 2016-12-05 | 1d? | 0d |  |  |  | 28.3h | 22.55h | 261.21 |  | 208.14 |
| 133 | 2.4.2.2.1 | Estudiar algoritmo | 28.5h | 2016-12-13 A | 2016-12-16 A |  | 100% |  | 2016-12-02 | 2016-12-05 | 1d? |  |  | finish no earlier than 2016-12-14 | IVAN PINA; JAUME LLORET; PABLO TORREGROSA | 8.8h | 8.8h | 81.22 |  | 81.22 |
| 134 | 2.4.2.2.2 | Programar algoritmo | 80h | 2016-12-01 A | 2016-12-14 |  | 10% | 72h | 2016-12-02 | 2016-12-05 | 1d? | 0d |  | finish no earlier than 2016-12-14 | IVAN PINA; PABLO TORREGROSA | 19.5h | 13.75h | 179.99 |  | 126.91 |
| 135 | 2.4.3 | **V2** | 11.91d | 2016-12-01 A | 2016-12-16 A |  | 100% |  | 2016-12-01 | 2016-12-14 | 9.12d? |  |  |  |  | 93.07h | 93.07h | 859.04 | 998.41 | 859.04 |
| 136 | 2.4.3.1 | **[V2]Creación de un cargador de niveles.** | 5d | 2016-12-01 A | 2016-12-07 A |  | 100% |  | 2016-11-17 | 2016-11-23 | 4.38d? |  |  |  |  | 21.42h | 21.42h | 197.71 |  | 197.71 |
| 137 | 2.4.3.1.1 | Diseñar nivel prueba | 2.04d | 2016-12-01 A | 2016-12-05 A |  | 100% |  | 2016-11-17 | 2016-11-17 | 5h? |  |  |  | HÉCTOR MEDINA | 0.3h | 0.3h | 2.77 |  | 2.77 |
| 138 | 2.4.3.1.2 | Programar cargador de niveles | 40h | 2016-12-01 A | 2016-12-07 A | 137 | 100% |  | 2016-11-17 | 2016-11-22 | 20h? |  |  |  | HÉCTOR MEDINA; DAVID SEGARRA | 21.12h | 21.12h | 194.94 |  | 194.94 |
| 139 | 2.4.3.2 | [V2]Control del player por motor de físicas 2D, Dynamic o kinematic | 7.19d | 2016-12-01 A | 2016-12-15 A |  | 100% |  |  |  |  |  |  | finish no earlier than 2016-12-14 | HÉCTOR MEDINA; DAVID SEGARRA; SAMUEL NAVARRO | 57.5h | 57.5h | 530.73 |  | 530.73 |
| 140 | 2.4.3.3 | **[V2]Implementación de cámara de seguimiento.** | 0.91d | 2016-12-16 A | 2016-12-16 A | 119 | 100% |  | 2016-11-23 | 2016-11-28 | 3.12d? |  |  |  |  | 5.15h | 5.15h | 47.53 | 444.89 | 47.53 |
| 141 | 2.4.3.3.1 | Programar cámara | 0.91d | 2016-12-16 A | 2016-12-16 A |  | 100% |  | 2016-11-23 | 2016-11-25 | 10h? |  |  | finish no earlier than 2016-12-01 | DAVID SEGARRA | 5.15h | 5.15h | 47.53 | 180.91 | 47.53 |
| 142 | 2.4.3.4 | **[V2]Mecánicas básicas entidades sin IA.** | 3.38d | 2016-12-12 A | 2016-12-15 A |  | 100% |  |  |  |  |  |  |  |  | 9h | 9h | 83.07 |  | 83.07 |
| 143 | 2.4.3.4.1 | Implementacion | 9h | 2016-12-12 A | 2016-12-15 A |  | 100% |  |  |  |  |  |  |  | DAVID SEGARRA; SAMUEL NAVARRO | 9h | 9h | 83.07 |  | 83.07 |
| 144 | 2.5 | **ITERACIÓN 5** | 12.72d? | 2016-12-15 A | 2017-01-02 | 124 | 76% | 3.1d? | 2016-12-15 | 2016-12-23 | 7d? | 0d |  |  |  | 105.6h | 57.6h | 974.69 | 1,933.13 | 531.65 |
| 145 | 2.5.1 | **PM** | 5.09d? | 2016-12-16 | 2016-12-23 |  |  |  | 2016-12-15 | 2016-12-23 | 7d? | 5.72d |  |  |  | 48h |  | 443.04 | 1,591.99 |  |
| 146 | 2.5.1.1 | **[PM]Planificación** | 1d? | 2016-12-16 | 2016-12-19 |  |  |  | 2016-12-15 | 2016-12-21 | 4.7d? | 7.11d |  |  |  |  |  |  |  |  |
| 147 | 2.5.1.1.1 | [PM]Detallar plan iteraciones del mes de Noviembre-Diciembre. | 1d? | 2016-12-16 | 2016-12-19 |  |  |  | 2016-12-15 | 2016-12-16 | 2d? | 7.11d | 0d |  |  |  |  |  |  |  |
| 148 | 2.5.1.2 | **[PM]Seguimiento** | 1d? | 2016-12-23 | 2016-12-23 |  |  |  | 2016-12-23 | 2016-12-23 | 1d? | 5.72d |  |  |  | 48h |  | 443.04 | 434.18 |  |
| 149 | 2.5.1.2.1 | [PM]Regitrar de tiempos y % de realización de tareas en Project. | 1d? | 2016-12-23 | 2016-12-23 |  |  |  | 2016-12-23 | 2016-12-23 | 1d? | 5.72d |  | finish no earlier than 2016-12-23 | DAVID SEGARRA; HÉCTOR MEDINA; IVAN PINA; JAUME LLORET; PABLO TORREGROSA; SAMUEL NAVARRO | 48h |  | 443.04 | 434.18 |  |
| 150 | 2.5.2 | **PD** | 4.38d | 2016-12-15 A | 2016-12-21 A |  | 100% |  | 2016-12-15 | 2016-12-21 | 4.5d? |  |  |  |  | 19h | 19h | 175.37 | 19.94 | 175.37 |
| 151 | 2.5.2.1 | [PD]I1. Video con animación del logo de la empresa | 2d | 2016-12-15 A | 2016-12-16 A |  | 100% |  |  |  |  |  |  | start no later than 2016-12-15 | SAMUEL NAVARRO | 16h | 16h | 147.68 |  | 147.68 |
| 152 | 2.5.2.2 | [PD]I2. Cartel juego/proyecto. | 0.38d | 2016-12-21 A | 2016-12-21 A |  | 100% |  | 2016-12-15 | 2016-12-21 | 4.5d? |  |  | start no later than 2016-12-21 | SAMUEL NAVARRO | 3h | 3h | 27.69 | 19.94 | 27.69 |
| 153 | 2.5.3 | **V1** | 10.72d | 2016-12-19 A | 2017-01-02 A |  | 100% |  | 2016-12-15 | 2016-12-19 | 2.38d? |  |  |  |  | 27h | 27h | 249.21 | 321.2 | 249.21 |
| 154 | 2.5.3.1 | Maquina de estados | 1d | 2016-12-30 A | 2017-01-02 A |  | 100% |  |  |  |  |  |  | start no earlier than 2016-12-19 | HÉCTOR MEDINA | 8h | 8h | 73.84 |  | 73.84 |
| 155 | 2.5.3.2 | [V1]Sistema de toma de decisiones con Behaviour Trees | 1.38d | 2016-12-19 A | 2016-12-22 A |  | 100% |  |  |  |  |  |  | start no later than 2016-12-16 | IVAN PINA; PABLO TORREGROSA | 19h | 19h | 175.37 |  | 175.37 |

Notes:
- 132: 35 h
- 136: 28 h
- 140: 17 h
- 144: 116.64 h
- 146: 23.04 h
- 147: 23.04 h
- 148: 21.6 h
- 149: 21.6 h
- 152: 12 h

| ID | WBS | Task | Duration | Start | Finish | Predecessors | Complete | Baseline start | Baseline finish | Baseline duration | Total slack | Free slack | Constraint | Resources | Work | Actual work | Cost | Baseline cost | Actual cost |
| --- | --- | --- | --- | --- | --- | --- | --- | --- | --- | --- | --- | --- | --- | --- | --- | --- | --- | --- | --- |
| 156 | 2.5.4 | **V2** | 2.92d | 2016-12-15 A | 2016-12-19 A |  | 100% |  |  |  |  |  |  |  | 11.6h | 11.6h | 107.07 |  | 107.07 |
| 157 | 2.5.4.1 | [V2]Control del player por motor de físicas 2D, Dynamic o kinematic | 0.53d | 2016-12-15 A | 2016-12-15 A |  | 100% |  |  |  |  |  | start no later than 2016-12-15 | DAVID SEGARRA | 4.2h | 4.2h | 38.77 |  | 38.77 |
| 158 | 2.5.4.2 | [V2] Mecanicas de acción | 0.93d | 2016-12-19 A | 2016-12-19 A |  | 100% |  |  |  |  |  | start no later than 2016-12-19 | DAVID SEGARRA | 7.4h | 7.4h | 68.3 |  | 68.3 |
| 159 | 2.6 | **Tareas inacabadas** | 45.61d? | 2016-10-20 | 2016-12-22 |  |  |  |  |  | 7.11d |  |  |  | 495.08h |  | 4,569.57 |  |  |
| 160 | 2.6.1 | **PM** | 45.61d? | 2016-10-20 | 2016-12-22 |  |  |  |  |  | 7.11d |  |  |  | 128h |  | 1,181.44 |  |  |
| 161 | 2.6.1.1 | [PM]Elaborar la presentación del Hito 1. | 1d? | 2016-10-20 | 2016-10-20 |  |  | 2016-12-15 | 2016-12-15 | 1d? | 48.72d | 0d |  | IVAN PINA; JAUME LLORET; PABLO TORREGROSA; SAMUEL NAVARRO | 32h |  | 295.36 | 289.45 |  |
| 162 | 2.6.1.2 | [PM]Exponer la presentación del Hito 1. | 1d? | 2016-10-21 | 2016-10-21 | 161 |  | 2016-12-16 | 2016-12-16 | 1d? | 48.72d | 0d |  | IVAN PINA; JAUME LLORET; PABLO TORREGROSA; SAMUEL NAVARRO | 32h |  | 295.36 | 289.45 |  |
| 163 | 2.6.1.3 | [PM]Confeccionar informes de Iteración e informe resumen de Hito 1. | 1d? | 2016-10-24 | 2016-10-24 | 162 |  | 2016-12-19 | 2016-12-19 | 1d? | 48.72d | 0d |  | IVAN PINA; JAUME LLORET; PABLO TORREGROSA; SAMUEL NAVARRO | 32h |  | 295.36 | 289.45 |  |
| 164 | 2.6.1.4 | [PM]Comparar la planifición prevista y real en Project Hito 1. | 1d? | 2016-10-25 | 2016-10-25 | 163 |  | 2016-12-20 | 2016-12-20 | 1d? | 48.72d |  |  | IVAN PINA; JAUME LLORET; PABLO TORREGROSA; SAMUEL NAVARRO | 32h |  | 295.36 | 289.45 |  |
| 165 | 2.6.1.5 | [PM]Aplicar el modelo EVA en Project. | 21.6h? | 2016-12-19 | 2016-12-22 | 147 |  | 2016-12-19 | 2016-12-21 | 21.6h? | 7.11d |  |  |  |  |  |  |  |  |
| 166 | 2.6.2 | **V1** | 31.25d? | 2016-10-20 | 2016-12-02 |  |  |  |  |  | 21.47d |  |  |  | 90.26h |  | 833.08 |  |  |
| 167 | 2.6.2.1 | **[V1]Pathfinding Básico con rejilla (A*/Dijkstra)** | 1d? | 2016-10-20 | 2016-10-20 |  |  | 2016-11-30 | 2016-12-01 | 1d? | 51.72d |  |  |  |  |  |  |  |  |
| 168 | 2.6.2.1.1 | Estudiar algoritmo | 1d? | 2016-10-20 | 2016-10-20 |  |  | 2016-11-30 | 2016-12-01 | 1d? | 51.72d |  |  |  |  |  |  |  |  |
| 169 | 2.6.2.1.2 | Programar algoritmo | 1d? | 2016-10-20 | 2016-10-20 |  |  | 2016-11-30 | 2016-12-01 | 1d? | 51.72d |  |  |  |  |  |  |  |  |
| 170 | 2.6.2.1.3 | Realizar pruebas | 1d? | 2016-10-20 | 2016-10-20 |  |  | 2016-11-30 | 2016-12-01 | 1d? | 51.72d |  |  |  |  |  |  |  |  |
| 171 | 2.6.2.1.4 | Optimizar código | 1d? | 2016-10-20 | 2016-10-20 |  |  | 2016-11-30 | 2016-12-01 | 1d? | 51.72d |  |  |  |  |  |  |  |  |
| 172 | 2.6.2.2 | **[V1]Sistema de toma de decisiones con Lógica Difusa** | 1.25d? | 2016-12-01 | 2016-12-02 |  |  | 2016-12-01 | 2016-12-02 | 1.25d? | 21.47d |  |  |  | 20h |  | 184.6 | 180.91 |  |
| 173 | 2.6.2.2.1 | Estudiar algoritmo | 3h? | 2016-12-01 | 2016-12-01 |  |  | 2016-12-01 | 2016-12-01 | 3h? | 21.47d | 0d | start no earlier than 2016-12-01 | JAUME LLORET; PABLO TORREGROSA | 6h |  | 55.38 | 54.27 |  |
| 174 | 2.6.2.2.2 | Programar algoritmo | 3h? | 2016-12-01 | 2016-12-01 | 173 |  | 2016-12-01 | 2016-12-01 | 3h? | 21.47d | 0d |  | JAUME LLORET; PABLO TORREGROSA | 6h |  | 55.38 | 54.27 |  |
| 175 | 2.6.2.2.3 | Realizar pruebas | 2h? | 2016-12-01 | 2016-12-01 | 174 |  | 2016-12-01 | 2016-12-01 | 2h? | 21.47d | 0d |  | JAUME LLORET; PABLO TORREGROSA | 4h |  | 36.92 | 36.18 |  |
| 176 | 2.6.2.2.4 | Optimizar código | 2h? | 2016-12-02 | 2016-12-02 | 175 |  | 2016-12-02 | 2016-12-02 | 2h? | 21.47d |  |  | JAUME LLORET; PABLO TORREGROSA | 4h |  | 36.92 | 36.18 |  |
| 177 | 2.6.2.3 | **[V1]Diseño de requerimientos y funciones de red.** | 2.02d? | 2016-10-20 | 2016-10-24 |  |  | 2016-11-04 | 2016-11-08 | 2.02d? | 50.7d |  |  |  | 32.26h |  | 297.74 | 276.9 |  |
| 178 | 2.6.2.3.1 | Especificar que logros | 8.06h? | 2016-10-20 | 2016-10-21 |  |  | 2016-11-04 | 2016-11-07 | 8.06h? | 50.7d | 0d |  | DAVID SEGARRA; HÉCTOR MEDINA | 16.13h |  | 148.87 | 138.45 |  |
| 179 | 2.6.2.3.2 | Especificar tipos de usuarios | 8.06h? | 2016-10-21 | 2016-10-24 | 178 |  | 2016-11-07 | 2016-11-08 | 8.06h? | 50.7d |  |  | HÉCTOR MEDINA; DAVID SEGARRA | 16.13h |  | 148.87 | 138.45 |  |

Notes:
- 161: 14.4 h
- 162: 14.4 h
- 163: 21.6 h
- 164: 21.6 h
- 165: 21.6 h
- 167: 30 h
- 172: 30 h
- 177: 15 h

| ID | WBS | Task | Duration | Start | Finish | Predecessors | Baseline start | Baseline finish | Baseline duration | Total slack | Free slack | Constraint | Resources | Work | Cost | Baseline cost |
| --- | --- | --- | --- | --- | --- | --- | --- | --- | --- | --- | --- | --- | --- | --- | --- | --- |
| 180 | 2.6.2.4 | **[V1] Diseño técnico del motor de red.** | 2.38d? | 2016-10-20 | 2016-10-24 |  | 2016-12-15 | 2016-12-19 | 2.38d? | 50.34d |  |  |  | 38h | 350.74 | 321.2 |
| 181 | 2.6.2.4.1 | Realizar diagrama | 9h? | 2016-10-20 | 2016-10-21 |  | 2016-12-15 | 2016-12-16 | 9h? | 50.34d | 0d |  | DAVID SEGARRA; HÉCTOR MEDINA | 18h | 166.14 | 149.53 |
| 182 | 2.6.2.4.2 | Implementar diagrama | 10h? | 2016-10-21 | 2016-10-24 | 181 | 2016-12-16 | 2016-12-19 | 10h? | 50.34d |  |  | DAVID SEGARRA; HÉCTOR MEDINA | 20h | 184.6 | 171.68 |
| 183 | 2.6.3 | **TAG** | 27.25d? | 2016-10-20 | 2016-11-28 |  | 2016-12-02 | 2016-12-12 | 6.25d? | 25.47d |  |  |  | 150h | 1,384.5 | 1,356.81 |
| 184 | 2.6.3.1 | **[TAG]E1. Visualización: visualizador OpenGL 4.X simple, con datos por programa. Shader Básico.** | 24.75d? | 2016-10-20 | 2016-11-23 |  | 2016-12-02 | 2016-12-07 | 3.75d? | 25.47d | 0d |  |  | 90h | 830.7 | 814.09 |
| 185 | 2.6.3.1.1 | Estudiar algoritmo | 8h? | 2016-10-20 | 2016-10-20 |  | 2016-12-02 | 2016-12-05 | 8h? | 46.47d | 21d |  | IVAN PINA; JAUME LLORET; PABLO TORREGROSA | 24h | 221.52 | 216.91 |
| 186 | 2.6.3.1.2 | Programar algoritmo | 12h? | 2016-11-21 | 2016-11-22 | 185 | 2016-12-05 | 2016-12-06 | 12h? | 25.47d | 0d | start no earlier than 2016-11-21 | IVAN PINA; JAUME LLORET; PABLO TORREGROSA | 36h | 332.28 | 325.82 |
| 187 | 2.6.3.1.3 | Realizar pruebas | 8h? | 2016-11-22 | 2016-11-23 | 186 | 2016-12-06 | 2016-12-07 | 8h? | 25.47d | 0d |  | IVAN PINA; JAUME LLORET; PABLO TORREGROSA | 24h | 221.52 | 216.91 |
| 188 | 2.6.3.1.4 | Optimizar código | 2h? | 2016-11-23 | 2016-11-23 | 187 | 2016-12-07 | 2016-12-07 | 2h? | 25.47d |  |  | IVAN PINA; JAUME LLORET; PABLO TORREGROSA | 6h | 55.38 | 54.46 |
| 189 | 2.6.3.2 | **[TAG]E2. Gestor de recursos: Parser de objetos en multiples formatos, salida en modo texto.** | 2.5d? | 2016-11-23 | 2016-11-28 | 184 | 2016-12-08 | 2016-12-12 | 2.5d? | 25.47d |  |  |  | 60h | 553.8 | 542.72 |
| 190 | 2.6.3.2.1 | Estudiar algoritmo | 4h? | 2016-11-23 | 2016-11-24 |  | 2016-12-08 | 2016-12-08 | 4h? | 25.47d | 0d |  | SAMUEL NAVARRO; DAVID SEGARRA; HÉCTOR MEDINA | 12h | 110.76 | 108.54 |
| 191 | 2.6.3.2.2 | Programar algoritmo | 8h? | 2016-11-24 | 2016-11-25 | 190 | 2016-12-08 | 2016-12-09 | 8h? | 25.47d | 0d |  | SAMUEL NAVARRO; DAVID SEGARRA; HÉCTOR MEDINA | 24h | 221.52 | 217.09 |
| 192 | 2.6.3.2.3 | Realizar pruebas | 4h? | 2016-11-25 | 2016-11-25 | 191 | 2016-12-09 | 2016-12-09 | 4h? | 25.47d | 0d |  | SAMUEL NAVARRO; DAVID SEGARRA; HÉCTOR MEDINA | 12h | 110.76 | 108.54 |
| 193 | 2.6.3.2.4 | Optimizar código | 4h? | 2016-11-25 | 2016-11-28 | 192 | 2016-12-12 | 2016-12-12 | 4h? | 25.47d |  |  | SAMUEL NAVARRO; DAVID SEGARRA; HÉCTOR MEDINA | 12h | 110.76 | 108.54 |
| 194 | 2.6.4 | **V2** | 39.12d? | 2016-10-20 | 2016-12-14 |  |  |  |  | 13.59d |  |  |  | 126.82h | 1,170.55 |  |
| 195 | 2.6.4.1 | **[V2]Sistema de depuración visual de las físicas** | 2.12d? | 2016-12-12 | 2016-12-14 | 205 | 2016-12-12 | 2016-12-14 | 2.12d? | 13.59d |  |  |  | 50.82h | 469.07 | 310.96 |
| 196 | 2.6.4.1.1 | Estudiar algoritmo | 3h? | 2016-12-12 | 2016-12-12 |  | 2016-12-12 | 2016-12-12 | 3h? | 13.59d | 0d | start no earlier than 2016-12-12 | HÉCTOR MEDINA; DAVID SEGARRA; SAMUEL NAVARRO | 9h | 83.07 | 37.38 |
| 197 | 2.6.4.1.2 | Programar algoritmo | 8h? | 2016-12-12 | 2016-12-13 | 196 | 2016-12-12 | 2016-12-13 | 8h? | 13.59d | 0d |  | HÉCTOR MEDINA; DAVID SEGARRA; SAMUEL NAVARRO | 24h | 221.52 | 110.76 |
| 198 | 2.6.4.1.3 | Realizar pruebas | 3h? | 2016-12-13 | 2016-12-13 | 197 | 2016-12-13 | 2016-12-13 | 3h? | 13.59d | 0d |  | HÉCTOR MEDINA; DAVID SEGARRA; SAMUEL NAVARRO | 9h | 83.07 | 81.41 |
| 199 | 2.6.4.1.4 | Optimizar código | 3h? | 2016-12-13 | 2016-12-14 | 198 | 2016-12-13 | 2016-12-14 | 3h? | 13.59d |  |  | HÉCTOR MEDINA [98%]; DAVID SEGARRA [98%]; SAMUEL NAVARRO [98%] | 8.82h | 81.41 | 81.41 |
| 200 | 2.6.4.2 | **[V2]Creación de un editor de niveles.** | 2.38d? | 2016-12-01 | 2016-12-05 |  | 2016-12-01 | 2016-12-05 | 2.38d? | 20.34d |  |  |  | 38h | 350.74 | 343.73 |
| 201 | 2.6.4.2.1 | Estudiar editor de niveles | 3h? | 2016-12-01 | 2016-12-01 |  | 2016-12-01 | 2016-12-01 | 3h? | 20.34d | 0d | start no earlier than 2016-12-01 | SAMUEL NAVARRO; DAVID SEGARRA | 6h | 55.38 | 54.27 |
| 202 | 2.6.4.2.2 | Programar editor de niveles | 10h? | 2016-12-01 | 2016-12-02 | 201 | 2016-12-01 | 2016-12-02 | 10h? | 20.34d | 0d |  | SAMUEL NAVARRO; DAVID SEGARRA | 20h | 184.6 | 180.91 |
| 203 | 2.6.4.2.3 | Realizar pruebas | 3h? | 2016-12-02 | 2016-12-02 | 202 | 2016-12-02 | 2016-12-02 | 3h? | 20.34d | 0d |  | SAMUEL NAVARRO; DAVID SEGARRA | 6h | 55.38 | 54.27 |
| 204 | 2.6.4.2.4 | Optimizar código | 3h? | 2016-12-05 | 2016-12-05 | 203 | 2016-12-05 | 2016-12-05 | 3h? | 20.34d |  |  | SAMUEL NAVARRO; DAVID SEGARRA | 6h | 55.38 | 54.27 |

Notes:
- 180: 29
- 184: 6 h
- 189: 15 h
- 195: 8 h
- 200: 55h

| ID | WBS | Task | Duration | Start | Finish | Predecessors | Baseline start | Baseline finish | Baseline duration | Total slack | Free slack | Resources | Work | Cost | Baseline cost |
| --- | --- | --- | --- | --- | --- | --- | --- | --- | --- | --- | --- | --- | --- | --- | --- |
| 205 | 2.6.4.3 | **[V2]Uso de trazado de rayos y otros test de las fisicas.** | 2.38d? | 2016-10-20 | 2016-10-24 |  | 2016-12-05 | 2016-12-07 | 2.38d? | 48.22d | 34.62d |  | 38h | 350.74 | 343.73 |
| 206 | 2.6.4.3.1 | Estudiar algoritmo | 3h? | 2016-10-20 | 2016-10-20 |  | 2016-12-05 | 2016-12-05 | 3h? | 48.22d | 0d | DAVID SEGARRA; SAMUEL NAVARRO | 6h | 55.38 | 54.27 |
| 207 | 2.6.4.3.2 | Programar algoritmo | 10h? | 2016-10-20 | 2016-10-21 | 206 | 2016-12-05 | 2016-12-06 | 10h? | 48.22d | 0d | DAVID SEGARRA; SAMUEL NAVARRO | 20h | 184.6 | 180.91 |
| 208 | 2.6.4.3.3 | Realizar pruebas | 3h? | 2016-10-21 | 2016-10-21 | 207 | 2016-12-07 | 2016-12-07 | 3h? | 48.22d | 0d | DAVID SEGARRA; SAMUEL NAVARRO | 6h | 55.38 | 54.27 |
| 209 | 2.6.4.3.4 | Optimizar código | 3h? | 2016-10-24 | 2016-10-24 | 208 | 2016-12-07 | 2016-12-07 | 3h? | 48.22d |  | DAVID SEGARRA; SAMUEL NAVARRO | 6h | 55.38 | 54.27 |
| 210 | 3 | **HITO 2** | 1d | 2017-01-02 | 2017-01-03 | 11 | 2016-12-26 | 2016-12-26 | 1d? | 0d |  |  |  |  |  |
| 211 | 3.1 | **[PM]Detallar plan iteraciones del mes de Enero** | 1d | 2017-01-02 | 2017-01-03 |  | 2016-12-26 | 2016-12-26 | 1d? | 0d |  |  |  |  |  |
| 212 | 3.1.1 | Creación de subtareas y precedencias en Project. | 1d | 2017-01-02 | 2017-01-03 |  | 2016-12-26 | 2016-12-26 | 1d? | 0d |  |  |  |  |  |
| 213 | 3.1.2 | Asignar recursos a las tareas en Project. | 1d | 2017-01-02 | 2017-01-03 |  | 2016-12-26 | 2016-12-26 | 1d? | 0d |  |  |  |  |  |
| 214 | 3.2 | [PM]Revisar especifiación del proyecto. | 1d | 2017-01-02 | 2017-01-03 |  | 2016-12-26 | 2016-12-26 | 1d? | 0d |  |  |  |  |  |
| 215 | 3.3 | [PM]Reestimar el proyecto | 1d | 2017-01-02 | 2017-01-03 |  | 2016-12-26 | 2016-12-26 | 1d? | 0d |  |  |  |  |  |
| 216 | 3.4 | **ITERACIÓN 1** | 1d | 2017-01-02 | 2017-01-03 |  | 2016-12-26 | 2016-12-26 | 1d? | 0d |  |  |  |  |  |
| 217 | 3.4.1 | [PM]Registrar de tiempos y % de realización de tareas en Project. | 1d | 2017-01-02 | 2017-01-03 |  | 2016-12-26 | 2016-12-26 | 1d? | 0d |  |  |  |  |  |
| 218 | 3.4.2 | [PM]Comparar la planificación prevista y real en Projects Hito 2 | 1d | 2017-01-02 | 2017-01-03 |  | 2016-12-26 | 2016-12-26 | 1d? | 0d |  |  |  |  |  |
| 219 | 3.4.3 | [PM]Confeccionar informes de Iteración e informe resumen de Hito 2 | 1d | 2017-01-02 | 2017-01-03 |  | 2016-12-26 | 2016-12-26 | 1d? | 0d |  |  |  |  |  |
| 220 | 3.4.4 | [TAG]E3. Visualización: visualizador OpenGL 4.X simple, con datos por fichero. Shader básico | 1d | 2017-01-02 | 2017-01-03 |  | 2016-12-26 | 2016-12-26 | 1d? | 0d |  |  |  |  |  |
| 221 | 3.4.5 | **[V1]Sistema de control de movimiento con Steering Behaviours** | 1d | 2017-01-02 | 2017-01-03 |  | 2016-12-26 | 2016-12-26 | 1d? | 0d |  |  |  |  |  |
| 222 | 3.4.5.1 | Estudiar algoritmo | 1d | 2017-01-02 | 2017-01-03 |  | 2016-12-26 | 2016-12-26 | 1d? | 0d |  |  |  |  |  |
| 223 | 3.4.5.2 | Programar algoritmo | 1d | 2017-01-02 | 2017-01-03 |  | 2016-12-26 | 2016-12-26 | 1d? | 0d |  |  |  |  |  |
| 224 | 3.4.5.3 | Realizar pruebas | 1d | 2017-01-02 | 2017-01-03 |  | 2016-12-26 | 2016-12-26 | 1d? | 0d |  |  |  |  |  |
| 225 | 3.4.5.4 | Optimizar código | 1d | 2017-01-02 | 2017-01-03 |  | 2016-12-26 | 2016-12-26 | 1d? | 0d |  |  |  |  |  |
| 226 | 3.4.6 | **[V1]Sistema de percepción sensorial.** | 1d | 2017-01-02 | 2017-01-03 |  | 2016-12-26 | 2016-12-26 | 1d? | 0d |  |  |  |  |  |
| 227 | 3.4.6.1 | Estudiar algoritmo | 1d | 2017-01-02 | 2017-01-03 |  | 2016-12-26 | 2016-12-26 | 1d? | 0d |  |  |  |  |  |
| 228 | 3.4.6.2 | Programar algoritmo | 1d | 2017-01-02 | 2017-01-03 |  | 2016-12-26 | 2016-12-26 | 1d? | 0d |  |  |  |  |  |
| 229 | 3.4.6.3 | Realizar pruebas | 1d | 2017-01-02 | 2017-01-03 |  | 2016-12-26 | 2016-12-26 | 1d? | 0d |  |  |  |  |  |
| 230 | 3.4.6.4 | Optimizar código | 1d | 2017-01-02 | 2017-01-03 |  | 2016-12-26 | 2016-12-26 | 1d? | 0d |  |  |  |  |  |

Notes:
- 205: 17 h
- 210: 636 h
- 212: 4,8
- 213: 4,8
- 214: 28,8
- 215: 28,8
- 216: 568,8
- 217: 9,6
- 218: 9,6
- 219: 9,6
- 220: 5
- 221: 30
- 226: 12

| ID | WBS | Task | Duration | Start | Finish | Baseline start | Baseline finish | Baseline duration | Total slack |
| --- | --- | --- | --- | --- | --- | --- | --- | --- | --- |
| 231 | 3.4.7 | **[V1]Sistema de Waypoints para Pathfinding continuo.** | 1d | 2017-01-02 | 2017-01-03 | 2016-12-26 | 2016-12-26 | 1d? | 0d |
| 232 | 3.4.7.1 | Estudiar algoritmo | 1d | 2017-01-02 | 2017-01-03 | 2016-12-26 | 2016-12-26 | 1d? | 0d |
| 233 | 3.4.7.2 | Programar algoritmo | 1d | 2017-01-02 | 2017-01-03 | 2016-12-26 | 2016-12-26 | 1d? | 0d |
| 234 | 3.4.7.3 | Realizar pruebas | 1d | 2017-01-02 | 2017-01-03 | 2016-12-26 | 2016-12-26 | 1d? | 0d |
| 235 | 3.4.7.4 | Optimizar código | 1d | 2017-01-02 | 2017-01-03 | 2016-12-26 | 2016-12-26 | 1d? | 0d |
| 236 | 3.4.8 | [V1]Editor in-game de parámetros y comportamientos de la IA | 1d | 2017-01-02 | 2017-01-03 | 2016-12-26 | 2016-12-26 | 1d? | 0d |
| 237 | 3.4.9 | **[V2]Powers-up y elementos adicionales** | 1d | 2017-01-02 | 2017-01-03 | 2016-12-26 | 2016-12-26 | 1d? | 0d |
| 238 | 3.4.9.1 | Especificar powers-up | 1d | 2017-01-02 | 2017-01-03 | 2016-12-26 | 2016-12-26 | 1d? | 0d |
| 239 | 3.4.9.2 | Programar powers-up | 1d | 2017-01-02 | 2017-01-03 | 2016-12-26 | 2016-12-26 | 1d? | 0d |
| 240 | 3.4.9.3 | Realizar pruebas | 1d | 2017-01-02 | 2017-01-03 | 2016-12-26 | 2016-12-26 | 1d? | 0d |
| 241 | 3.4.9.4 | Balancear powers-up | 1d | 2017-01-02 | 2017-01-03 | 2016-12-26 | 2016-12-26 | 1d? | 0d |
| 242 | 3.4.9.5 | Optimizar código | 1d | 2017-01-02 | 2017-01-03 | 2016-12-26 | 2016-12-26 | 1d? | 0d |
| 243 | 3.4.10 | **[V2]Implementación de cámara inteligente que ajuste ángulo y zoom.** | 1d | 2017-01-02 | 2017-01-03 | 2016-12-26 | 2016-12-26 | 1d? | 0d |
| 244 | 3.4.10.1 | Estudiar la cámara | 1d | 2017-01-02 | 2017-01-03 | 2016-12-26 | 2016-12-26 | 1d? | 0d |
| 245 | 3.4.10.2 | Programar cámara | 1d | 2017-01-02 | 2017-01-03 | 2016-12-26 | 2016-12-26 | 1d? | 0d |
| 246 | 3.4.10.3 | Realizar pruebas | 1d | 2017-01-02 | 2017-01-03 | 2016-12-26 | 2016-12-26 | 1d? | 0d |
| 247 | 3.4.10.4 | Optimizar código | 1d | 2017-01-02 | 2017-01-03 | 2016-12-26 | 2016-12-26 | 1d? | 0d |
| 248 | 3.4.11 | **[V2]Integración de librería para GUI.** | 1d | 2017-01-02 | 2017-01-03 | 2016-12-26 | 2016-12-26 | 1d? | 0d |
| 249 | 3.4.11.1 | Ver distintas librerias | 1d | 2017-01-02 | 2017-01-03 | 2016-12-26 | 2016-12-26 | 1d? | 0d |
| 250 | 3.4.11.2 | Incluir librería | 1d | 2017-01-02 | 2017-01-03 | 2016-12-26 | 2016-12-26 | 1d? | 0d |
| 251 | 3.4.11.3 | Diseñar GUI | 1d | 2017-01-02 | 2017-01-03 | 2016-12-26 | 2016-12-26 | 1d? | 0d |
| 252 | 3.4.11.4 | Incluir GUI | 1d | 2017-01-02 | 2017-01-03 | 2016-12-26 | 2016-12-26 | 1d? | 0d |
| 253 | 3.4.11.5 | Realizar pruebas | 1d | 2017-01-02 | 2017-01-03 | 2016-12-26 | 2016-12-26 | 1d? | 0d |
| 254 | 3.4.12 | **[V2]Implementación de menús.** | 1d | 2017-01-02 | 2017-01-03 | 2016-12-26 | 2016-12-26 | 1d? | 0d |
| 255 | 3.4.12.1 | Diseñar menus | 1d | 2017-01-02 | 2017-01-03 | 2016-12-26 | 2016-12-26 | 1d? | 0d |
| 256 | 3.4.12.2 | Implementar menus | 1d | 2017-01-02 | 2017-01-03 | 2016-12-26 | 2016-12-26 | 1d? | 0d |
| 257 | 3.4.12.3 | Probar menus | 1d | 2017-01-02 | 2017-01-03 | 2016-12-26 | 2016-12-26 | 1d? | 0d |
| 258 | 3.4.12.4 | Optimizar menus | 1d | 2017-01-02 | 2017-01-03 | 2016-12-26 | 2016-12-26 | 1d? | 0d |

Notes:
- 231: 60
- 236: 90
- 237: 14
- 243: 28
- 248: 5
- 254: 35

| ID | WBS | Task | Duration | Start | Finish | Predecessors | Baseline start | Baseline finish | Baseline duration | Total slack |
| --- | --- | --- | --- | --- | --- | --- | --- | --- | --- | --- |
| 259 | 3.4.13 | **[V2]Oclusiones mediante portales/PVS** | 1d | 2017-01-02 | 2017-01-03 |  | 2016-12-26 | 2016-12-26 | 1d? | 0d |
| 260 | 3.4.13.1 | Estudiar algoritmo | 1d | 2017-01-02 | 2017-01-03 |  | 2016-12-26 | 2016-12-26 | 1d? | 0d |
| 261 | 3.4.13.2 | Programar algoritmo | 1d | 2017-01-02 | 2017-01-03 |  | 2016-12-26 | 2016-12-26 | 1d? | 0d |
| 262 | 3.4.13.3 | Realizar pruebas | 1d | 2017-01-02 | 2017-01-03 |  | 2016-12-26 | 2016-12-26 | 1d? | 0d |
| 263 | 3.4.13.4 | Optimizar código | 1d | 2017-01-02 | 2017-01-03 |  | 2016-12-26 | 2016-12-26 | 1d? | 0d |
| 264 | 3.4.14 | [V2]Sistema de Level-Of-Detail para la selección de la malla grafica de los objetos. | 1d | 2017-01-02 | 2017-01-03 |  | 2016-12-26 | 2016-12-26 | 1d? | 0d |
| 265 | 3.4.15 | [PD]I3. Trailer juego/proyecto | 1d | 2017-01-02 | 2017-01-03 |  | 2016-12-26 | 2016-12-26 | 1d? | 0d |
| 266 | 3.4.16 | [RV]I2. Modelado de personajes | 1d | 2017-01-02 | 2017-01-03 |  | 2016-12-26 | 2016-12-26 | 1d? | 0d |
| 267 | 3.4.17 | [RV]I3. Texturizado de personajes. | 1d | 2017-01-02 | 2017-01-03 |  | 2016-12-26 | 2016-12-26 | 1d? | 0d |
| 268 | 3.4.18 | [RV]I4. Rigging de los personajes. | 1d | 2017-01-02 | 2017-01-03 |  | 2016-12-26 | 2016-12-26 | 1d? | 0d |
| 269 | 4 | **HITO 3** | 1d | 2017-01-03 | 2017-01-04 | 210 | 2016-12-27 | 2016-12-27 | 1d? | 0d |
| 270 | 4.1 | **[PM]Detallar plan iteraciones del mes de Febrero** | 1d | 2017-01-03 | 2017-01-04 |  | 2016-12-27 | 2016-12-27 | 1d? | 0d |
| 271 | 4.1.1 | Creación de subtareas y precedencias en Project. | 1d | 2017-01-03 | 2017-01-04 |  | 2016-12-27 | 2016-12-27 | 1d? | 0d |
| 272 | 4.1.2 | Asignar recursos a las tareas en Project. | 1d | 2017-01-03 | 2017-01-04 |  | 2016-12-27 | 2016-12-27 | 1d? | 0d |
| 273 | 4.2 | **ITERACIÓN 1** | 1d | 2017-01-03 | 2017-01-04 |  | 2016-12-27 | 2016-12-27 | 1d? | 0d |
| 274 | 4.2.1 | [TAG]E4. Tipos de datos para entidades de tipo transformacion. Salida en modo texto | 1d | 2017-01-03 | 2017-01-04 |  | 2016-12-27 | 2016-12-27 | 1d? | 0d |
| 275 | 4.2.2 | [TAG]E5. Tipos de datos para entidades de tipo malla. Salida en modo texto | 1d | 2017-01-03 | 2017-01-04 |  | 2016-12-27 | 2016-12-27 | 1d? | 0d |
| 276 | 4.2.3 | [TAG]E6.Tipos de datos para entidades de tipo cámara y luz. Salida en modo texto | 1d | 2017-01-03 | 2017-01-04 |  | 2016-12-27 | 2016-12-27 | 1d? | 0d |
| 277 | 4.2.4 | [TAG]E7. Tipos de datos para entidades de tipo animación. Salida en modo texto | 1d | 2017-01-03 | 2017-01-04 |  | 2016-12-27 | 2016-12-27 | 1d? | 0d |
| 278 | 4.2.5 | [TAG]E9. Carga de modelos en formato múltiple en las entidades de tipo malla. Carga de varios ficheros para animación. Salida en modo texto | 1d | 2017-01-03 | 2017-01-04 |  | 2016-12-27 | 2016-12-27 | 1d? | 0d |
| 279 | 4.2.6 | [TAG]E16. IGC.Cargador de modelos, Movimiento del modelo, Movimiento de luces, Movimiento de cámara | 1d | 2017-01-03 | 2017-01-04 |  | 2016-12-27 | 2016-12-27 | 1d? | 0d |
| 280 | 4.2.7 | **[V1]Flocking: comportamiento grupal emergente** | 1d | 2017-01-03 | 2017-01-04 |  | 2016-12-27 | 2016-12-27 | 1d? | 0d |
| 281 | 4.2.7.1 | Estudiar algoritmo | 1d | 2017-01-03 | 2017-01-04 |  | 2016-12-27 | 2016-12-27 | 1d? | 0d |
| 282 | 4.2.7.2 | Programar algoritmo | 1d | 2017-01-03 | 2017-01-04 |  | 2016-12-27 | 2016-12-27 | 1d? | 0d |
| 283 | 4.2.7.3 | Realizar pruebas | 1d | 2017-01-03 | 2017-01-04 |  | 2016-12-27 | 2016-12-27 | 1d? | 0d |
| 284 | 4.2.7.4 | Optimizar código | 1d | 2017-01-03 | 2017-01-04 |  | 2016-12-27 | 2016-12-27 | 1d? | 0d |

Notes:
- 259: 17
- 264: 17
- 265: 35
- 266: 90
- 267: 90
- 268: 12
- 269: 1077,8 h
- 270: 9,6
- 271: 4.8
- 272: 4.8
- 273: 657
- 274: 10
- 275: 25
- 276: 15
- 277: 8
- 278: 15
- 279: 60
- 280: 50

| ID | WBS | Task | Duration | Start | Finish | Baseline start | Baseline finish | Baseline duration | Total slack |
| --- | --- | --- | --- | --- | --- | --- | --- | --- | --- |
| 285 | 4.2.8 | **[V1]Comunicación simulada básica entre NPCs(Blackboard)** | 1d | 2017-01-03 | 2017-01-04 | 2016-12-27 | 2016-12-27 | 1d? | 0d |
| 286 | 4.2.8.1 | Estudiar algoritmo | 1d | 2017-01-03 | 2017-01-04 | 2016-12-27 | 2016-12-27 | 1d? | 0d |
| 287 | 4.2.8.2 | Programar algoritmo | 1d | 2017-01-03 | 2017-01-04 | 2016-12-27 | 2016-12-27 | 1d? | 0d |
| 288 | 4.2.8.3 | Realizar pruebas | 1d | 2017-01-03 | 2017-01-04 | 2016-12-27 | 2016-12-27 | 1d? | 0d |
| 289 | 4.2.8.4 | Optimizar código | 1d | 2017-01-03 | 2017-01-04 | 2016-12-27 | 2016-12-27 | 1d? | 0d |
| 290 | 4.2.9 | **[V1]Sistema de memoria de estado y reacción para NPCs** | 1d | 2017-01-03 | 2017-01-04 | 2016-12-27 | 2016-12-27 | 1d? | 0d |
| 291 | 4.2.9.1 | Estudiar algoritmo | 1d | 2017-01-03 | 2017-01-04 | 2016-12-27 | 2016-12-27 | 1d? | 0d |
| 292 | 4.2.9.2 | Programar algoritmo | 1d | 2017-01-03 | 2017-01-04 | 2016-12-27 | 2016-12-27 | 1d? | 0d |
| 293 | 4.2.9.3 | Realizar pruebas | 1d | 2017-01-03 | 2017-01-04 | 2016-12-27 | 2016-12-27 | 1d? | 0d |
| 294 | 4.2.9.4 | Optimizar código | 1d | 2017-01-03 | 2017-01-04 | 2016-12-27 | 2016-12-27 | 1d? | 0d |
| 295 | 4.2.10 | **[V2]Implementación del HUD** | 1d | 2017-01-03 | 2017-01-04 | 2016-12-27 | 2016-12-27 | 1d? | 0d |
| 296 | 4.2.10.1 | Diseñar HUD | 1d | 2017-01-03 | 2017-01-04 | 2016-12-27 | 2016-12-27 | 1d? | 0d |
| 297 | 4.2.10.2 | Implementar HUD | 1d | 2017-01-03 | 2017-01-04 | 2016-12-27 | 2016-12-27 | 1d? | 0d |
| 298 | 4.2.10.3 | Realizar pruebas | 1d | 2017-01-03 | 2017-01-04 | 2016-12-27 | 2016-12-27 | 1d? | 0d |
| 299 | 4.2.10.4 | Mejorar HUD | 1d | 2017-01-03 | 2017-01-04 | 2016-12-27 | 2016-12-27 | 1d? | 0d |
| 300 | 4.2.11 | [RV]I2. Modelado de personajes | 1d | 2017-01-03 | 2017-01-04 | 2016-12-27 | 2016-12-27 | 1d? | 0d |
| 301 | 4.2.12 | [RV]I3. Texturizado de personajes. | 1d | 2017-01-03 | 2017-01-04 | 2016-12-27 | 2016-12-27 | 1d? | 0d |
| 302 | 4.2.13 | [RV]I4. Captura de movimiento | 1d | 2017-01-03 | 2017-01-04 | 2016-12-27 | 2016-12-27 | 1d? | 0d |
| 303 | 4.2.14 | [RV]I5. Animación de los personajes | 1d | 2017-01-03 | 2017-01-04 | 2016-12-27 | 2016-12-27 | 1d? | 0d |
| 304 | 4.3 | **ITERACIÓN 2** | 1d | 2017-01-03 | 2017-01-04 | 2016-12-27 | 2016-12-27 | 1d? | 0d |
| 305 | 4.3.1 | [PM]Registrar de tiempos y % de realización de tareas en Project. | 1d | 2017-01-03 | 2017-01-04 | 2016-12-27 | 2016-12-27 | 1d? | 0d |
| 306 | 4.3.2 | [PM]Comparar la planificación prevista y real en Projects Hito 3 | 1d | 2017-01-03 | 2017-01-04 | 2016-12-27 | 2016-12-27 | 1d? | 0d |
| 307 | 4.3.3 | [PM]Confeccionar informes de Iteración e informe resumen de Hito 3 | 1d | 2017-01-03 | 2017-01-04 | 2016-12-27 | 2016-12-27 | 1d? | 0d |
| 308 | 4.3.4 | [PM]Elaborar la presentación del Hito 3. | 1d | 2017-01-03 | 2017-01-04 | 2016-12-27 | 2016-12-27 | 1d? | 0d |
| 309 | 4.3.5 | [PM]Exponer la presentación del Hito 3. | 1d | 2017-01-03 | 2017-01-04 | 2016-12-27 | 2016-12-27 | 1d? | 0d |
| 310 | 4.3.6 | [TAG]E10. Visualizador OpenGL 4.X de las entidades tipo malla. Shader Básico. Integración con el motor. Sin materiales, texturas, cámara ni luces | 1d | 2017-01-03 | 2017-01-04 | 2016-12-27 | 2016-12-27 | 1d? | 0d |
| 311 | 4.3.7 | [TAG]E11. Visualizador OpenGL 4.X de las entidades tipo malla. Shader básico. Con cámara y luces de varios tipos. Visualización con registro de cámaras y luces. | 1d | 2017-01-03 | 2017-01-04 | 2016-12-27 | 2016-12-27 | 1d? | 0d |
| 312 | 4.3.8 | [TAG]E15. Visualizador OpenGL 4.X con cuatro shaders avanzados | 1d | 2017-01-03 | 2017-01-04 | 2016-12-27 | 2016-12-27 | 1d? | 0d |
| 313 | 4.3.9 | [TAG]E14. Creación de una fachada entre el motor y la aplicación. | 1d | 2017-01-03 | 2017-01-04 | 2016-12-27 | 2016-12-27 | 1d? | 0d |
| 314 | 4.3.10 | [TAG]Optimizaciones del motor | 1d | 2017-01-03 | 2017-01-04 | 2016-12-27 | 2016-12-27 | 1d? | 0d |

Notes:
- 285: 35
- 290: 26
- 295: 23
- 300: 90
- 301: 90
- 302: 60
- 303: 150
- 304: 456,2
- 305: 9,6
- 306: 9,6
- 307: 9,6
- 308: 7,2
- 309: 7,2
- 310: 10
- 311: 20
- 312: 45
- 313: 25
- 314: 45

| ID | WBS | Task | Duration | Start | Finish | Predecessors | Baseline start | Baseline finish | Baseline duration | Total slack |
| --- | --- | --- | --- | --- | --- | --- | --- | --- | --- | --- |
| 315 | 4.3.11 | **[V1]Sistema de Navmeshes para pathfinding continuo** | 1d | 2017-01-03 | 2017-01-04 |  | 2016-12-27 | 2016-12-27 | 1d? | 0d |
| 316 | 4.3.11.1 | Estudiar algoritmo | 1d | 2017-01-03 | 2017-01-04 |  | 2016-12-27 | 2016-12-27 | 1d? | 0d |
| 317 | 4.3.11.2 | Programar algoritmo | 1d | 2017-01-03 | 2017-01-04 |  | 2016-12-27 | 2016-12-27 | 1d? | 0d |
| 318 | 4.3.11.3 | Realizar pruebas | 1d | 2017-01-03 | 2017-01-04 |  | 2016-12-27 | 2016-12-27 | 1d? | 0d |
| 319 | 4.3.11.4 | Optimizar código | 1d | 2017-01-03 | 2017-01-04 |  | 2016-12-27 | 2016-12-27 | 1d? | 0d |
| 320 | 4.3.12 | [V1]Sistema de depuración visual in-game de la IA | 1d | 2017-01-03 | 2017-01-04 |  | 2016-12-27 | 2016-12-27 | 1d? | 0d |
| 321 | 4.3.13 | **[V2]Implementación de clipping** | 1d | 2017-01-03 | 2017-01-04 |  | 2016-12-27 | 2016-12-27 | 1d? | 0d |
| 322 | 4.3.13.1 | Estudiar algoritmo | 1d | 2017-01-03 | 2017-01-04 |  | 2016-12-27 | 2016-12-27 | 1d? | 0d |
| 323 | 4.3.13.2 | Programar algoritmo | 1d | 2017-01-03 | 2017-01-04 |  | 2016-12-27 | 2016-12-27 | 1d? | 0d |
| 324 | 4.3.13.3 | Realizar pruebas | 1d | 2017-01-03 | 2017-01-04 |  | 2016-12-27 | 2016-12-27 | 1d? | 0d |
| 325 | 4.3.13.4 | Optimizar código | 1d | 2017-01-03 | 2017-01-04 |  | 2016-12-27 | 2016-12-27 | 1d? | 0d |
| 326 | 4.3.14 | **[V2]Diseño y creación de niveles** | 1d | 2017-01-03 | 2017-01-04 |  | 2016-12-27 | 2016-12-27 | 1d? | 0d |
| 327 | 4.3.14.1 | Diseñar niveles | 1d | 2017-01-03 | 2017-01-04 |  | 2016-12-27 | 2016-12-27 | 1d? | 0d |
| 328 | 4.3.14.2 | Modelar niveles | 1d | 2017-01-03 | 2017-01-04 |  | 2016-12-27 | 2016-12-27 | 1d? | 0d |
| 329 | 4.3.14.3 | Implementar niveles | 1d | 2017-01-03 | 2017-01-04 |  | 2016-12-27 | 2016-12-27 | 1d? | 0d |
| 330 | 4.3.14.4 | Probar niveles | 1d | 2017-01-03 | 2017-01-04 |  | 2016-12-27 | 2016-12-27 | 1d? | 0d |
| 331 | 4.3.14.5 | Mejorar niveles | 1d | 2017-01-03 | 2017-01-04 |  | 2016-12-27 | 2016-12-27 | 1d? | 0d |
| 332 | 4.3.15 | [RV]I4. Rigging de los personajes. | 1d | 2017-01-03 | 2017-01-04 |  | 2016-12-27 | 2016-12-27 | 1d? | 0d |
| 333 | 4.3.16 | [RV]I4. Captura de movimiento | 1d | 2017-01-03 | 2017-01-04 |  | 2016-12-27 | 2016-12-27 | 1d? | 0d |
| 334 | 5 | **HITO 4** | 1d? | 2017-01-04 | 2017-01-05 | 269 | 2016-12-28 | 2016-12-28 | 1d? | 0d |
| 335 | 5.1 | **[PM]Detallar plan iteraciones del mes de Abril-Mayo** | 1d? | 2017-01-04 | 2017-01-05 |  | 2016-12-28 | 2016-12-28 | 1d? | 0d |
| 336 | 5.1.1 | Creación de subtareas y precedencias en Project. | 1d? | 2017-01-04 | 2017-01-05 |  | 2016-12-28 | 2016-12-28 | 1d? | 0d |
| 337 | 5.1.2 | Asignar recursos a las tareas en Project. | 1d? | 2017-01-04 | 2017-01-05 |  | 2016-12-28 | 2016-12-28 | 1d? | 0d |
| 338 | 5.2 | **ITERACIÓN 1** | 1d? | 2017-01-04 | 2017-01-05 |  | 2016-12-28 | 2016-12-28 | 1d? | 0d |
| 339 | 5.2.1 | [PM]Registrar de tiempos y % de realización de tareas en Project. | 1d? | 2017-01-04 | 2017-01-05 |  | 2016-12-28 | 2016-12-28 | 1d? | 0d |
| 340 | 5.2.2 | [TAG]Efectos visuales | 1d? | 2017-01-04 | 2017-01-05 |  | 2016-12-28 | 2016-12-28 | 1d? | 0d |
| 341 | 5.2.3 | [V1]Gestión de recursos de IA con Level-of-Detail | 1d? | 2017-01-04 | 2017-01-05 |  | 2016-12-28 | 2016-12-28 | 1d? | 0d |
| 342 | 5.2.4 | [V2]Implementación de sistemas de partículas | 1d? | 2017-01-04 | 2017-01-05 |  | 2016-12-28 | 2016-12-28 | 1d? | 0d |
| 343 | 5.2.5 | [PD]I4. Making of juego/proyecto | 1d? | 2017-01-04 | 2017-01-05 |  | 2016-12-28 | 2016-12-28 | 1d? | 0d |
| 344 | 5.2.6 | [RV]I8. Modelado del entorno y elementos. | 1d? | 2017-01-04 | 2017-01-05 |  | 2016-12-28 | 2016-12-28 | 1d? | 0d |

Notes:
- 315: 80
- 320: 60
- 321: 11
- 326: 45
- 332: 12
- 333: 60
- 336: 4,8
- 337: 4,8
- 339: 9,6
- 340: 40
- 341: 35
- 342: 15
- 343: 30
- 344: 120

| ID | WBS | Task | Duration | Start | Finish | Baseline start | Baseline finish | Baseline duration | Total slack |
| --- | --- | --- | --- | --- | --- | --- | --- | --- | --- |
| 345 | 5.3 | **ITERACIÓN 2** | 1d? | 2017-01-04 | 2017-01-05 | 2016-12-28 | 2016-12-28 | 1d? | 0d |
| 346 | 5.3.1 | [PM]Comparar la planificación prevista y real en Projects Hito 4 | 1d? | 2017-01-04 | 2017-01-05 | 2016-12-28 | 2016-12-28 | 1d? | 0d |
| 347 | 5.3.2 | [PM]Confeccionar informes de Iteración e informe resumen de Hito 4 | 1d? | 2017-01-04 | 2017-01-05 | 2016-12-28 | 2016-12-28 | 1d? | 0d |
| 348 | 5.3.3 | [PMElaborar la presentación del Hito 4 | 1d? | 2017-01-04 | 2017-01-05 | 2016-12-28 | 2016-12-28 | 1d? | 0d |
| 349 | 5.3.4 | [PM]Exponer la presentación del Hito 4 | 1d? | 2017-01-04 | 2017-01-05 | 2016-12-28 | 2016-12-28 | 1d? | 0d |
| 350 | 5.3.5 | [TAG]Extras | 1d? | 2017-01-04 | 2017-01-05 | 2016-12-28 | 2016-12-28 | 1d? | 0d |
| 351 | 5.3.6 | [V1]Sistema de logros y puntuaciones Web | 1d? | 2017-01-04 | 2017-01-05 | 2016-12-28 | 2016-12-28 | 1d? | 0d |
| 352 | 5.3.7 | [PD]I5. Créditos | 1d? | 2017-01-04 | 2017-01-05 | 2016-12-28 | 2016-12-28 | 1d? | 0d |
| 353 | 5.3.8 | [RV]I9. Texturizado del entorno y elementos. | 1d? | 2017-01-04 | 2017-01-05 | 2016-12-28 | 2016-12-28 | 1d? | 0d |

Notes:
- 346: 9,6
- 347: 9,6
- 348: 7,2
- 349: 7,2
- 350: 170
- 351: 30
- 352: 5
- 353: 90
